# CONSTRUCTION OF 8-LANE OVERHEADBRIDGE AT SHAHDARA

Schedule from Primavera P6, 2023-06-01 to 2023-12-15, data date 2023-06-01, costs in USD.
Must finish by 2023-12-15

## Calendars

- Imamia Flyover: Mon-Sat 00:00-06:00, 08:00-18:00, 20:00-00:00; Sun off. Exceptions (off unless hours are given): 2023-06-04 02:00-22:00, 2023-06-11 to 2023-06-18 02:00-22:00, 2023-06-25 02:00-22:00, 2023-06-28 to 2023-06-30, 2023-07-01 to 2023-07-02 02:00-22:00, 2023-07-09 02:00-22:00, 2023-07-16 02:00-22:00, 2023-07-23 02:00-22:00, 2023-07-27 to 2023-07-28, 2023-07-30 02:00-22:00, 2023-08-06 02:00-22:00, 2023-08-13 02:00-22:00, 2023-08-14, 2023-08-20 02:00-22:00, 2023-08-27 02:00-22:00, 2023-09-03 02:00-22:00, 2023-09-10 02:00-22:00, 2023-09-17 02:00-22:00, 2023-09-24 02:00-22:00, 2023-09-26, 2023-10-01 02:00-22:00, 2023-10-08 02:00-22:00, 2023-10-15 02:00-22:00, 2023-10-22 02:00-22:00, 2023-10-29 02:00-22:00, 2023-11-05 02:00-22:00, 2023-11-12 02:00-22:00, 2023-11-19 02:00-22:00, 2023-11-26 02:00-22:00, 2023-12-03 02:00-22:00, 2023-12-10 02:00-22:00.

## Schedule

| ID | WBS | Activity | Type | Duration | Start | Finish | Predecessors | Total float | Free float | Constraint |
| --- | --- | --- | --- | --- | --- | --- | --- | --- | --- | --- |
|  | 2 | **Project Commencement** |  |  | 2023-06-15 | 2023-12-15 |  |  |  |  |
| A1470 |  | Project Commencement | milestone | 0d | 2023-06-15 | 2023-06-15 | A1990 SS | 0d |  | start on or after 2023-06-15 |
| A1480 |  | Project Completion | milestone | 0d | 2023-12-15 | 2023-12-15 | A2200 | 0d |  |  |
|  | 8 | **Pre-Construction Phase** |  |  | 2023-06-01 | 2023-06-28 |  |  |  |  |
|  | 4 | **Pre-Requisites** |  |  | 2023-06-01 | 2023-06-15 |  |  |  |  |
| A1990 |  | Issuance of Construction Drawings |  | 15d | 2023-06-01 | 2023-06-15 |  | 0d |  |  |
| A2000 |  | NOC from Railway |  | 15d | 2023-06-01 | 2023-06-15 |  | 96d |  |  |
| A2010 |  | Removal of Encroachments |  | 15d | 2023-06-01 | 2023-06-15 |  | 118d | 114.8d |  |
|  | 1 | **Joint Survey** |  |  | 2023-06-01 | 2023-06-11 |  |  |  |  |
| A1550 |  | Conducting Joint Survey |  | 10d | 2023-06-01 | 2023-06-11 | A1200 SS | 178d |  |  |
|  | 2 | **Method Statment** |  |  | 2023-06-01 | 2023-06-18 |  |  |  |  |
| A1560 |  | Submission of Method Statement for Construction Works |  | 15d | 2023-06-01 | 2023-06-15 |  | 161d | 0d |  |
| A1570 |  | Approval of Method Statement for Construction Works |  | 15d | 2023-06-04 | 2023-06-18 | A1560 SS+3d | 161d | 0d |  |
|  | 3 | **Mix Design** |  |  | 2023-06-05 | 2023-06-28 |  |  |  |  |
| A1580 |  | Submission of Mix Design of Concrete |  | 10d | 2023-06-05 | 2023-06-14 | A1570 SS+1d | 161d | 0d |  |
| A1590 |  | Approval of Mix Design of Concrete |  | 10d | 2023-06-06 | 2023-06-15 | A1580 SS+1d | 161d | 0d |  |
| A1600 |  | Submission of Job Mix Formula for Asphlat works |  | 10d | 2023-06-17 | 2023-06-27 | A1590 FS+1d | 161d | 0d |  |
| A1610 |  | Approval of Job Mix Formula for Asphlat works |  | 10d | 2023-06-18 | 2023-06-28 | A1600 SS+1d | 161d |  |  |
|  | 7 | **Moblization Phase** |  |  | 2023-06-01 | 2023-06-15 |  |  |  |  |
|  | 4 | **Contractor Staff, Office and Residence** |  |  | 2023-06-01 | 2023-06-11 |  |  |  |  |
| A1490 |  | Establisment of Contactor Residence and Office |  | 10d | 2023-06-01 | 2023-06-11 |  | 178d | 0d |  |
| A1500 |  | Mobilization of Contractor Staff |  | 10d | 2023-06-01 | 2023-06-11 | A1490 SS | 178d |  |  |
|  | 1 | **Mobilization of Plants** |  |  | 2023-06-01 | 2023-06-15 |  |  |  |  |
| A1510 |  | Mobilization and Erection of Batching Plant |  | 15d | 2023-06-01 | 2023-06-15 |  | 173d |  |  |

| ID | WBS | Activity | Type | Duration | Start | Finish | Predecessors | Total float | Cost | Bill Wise |
| --- | --- | --- | --- | --- | --- | --- | --- | --- | --- | --- |
|  | 2 | **Mobilization of Machinery** |  |  | 2023-06-01 | 2023-06-11 |  |  |  |  |
| A1520 |  | Mobilization of Construction Machinery at Site |  | 10d | 2023-06-01 | 2023-06-11 |  | 178d |  |  |
|  | 3 | **Establishment of Material Yard** |  |  | 2023-06-01 | 2023-06-15 |  |  |  |  |
| A1530 |  | Estab of Material Yard |  | 15d | 2023-06-01 | 2023-06-15 |  | 173d |  |  |
| A1540 |  | Estab of Steel Yard |  | 15d | 2023-06-01 | 2023-06-15 |  | 173d |  |  |
|  | 6 | **Construction Work Milestone** |  |  | 2023-07-21 | 2023-12-13 |  |  |  |  |
| A1900 |  | Completion of Piles | milestone | 0d | 2023-07-21 | 2023-07-21 | A1670 | 143d |  |  |
| A1940 |  | Completion of Retaining Wall | milestone | 0d | 2023-08-13 | 2023-08-13 | A1030 | 121.2d |  |  |
| A1910 |  | Completion of Piers | milestone | 0d | 2023-08-18 | 2023-08-18 | A1740 | 118d |  |  |
| A1920 |  | Completion of Transom | milestone | 0d | 2023-09-19 | 2023-09-19 | A1760 | 86d |  |  |
| A1950 |  | Completion of Earthwork | milestone | 0d | 2023-09-24 | 2023-09-24 | A1080, A1070 | 80.2d |  |  |
| A1960 |  | Completion of Subbase and Base Course | milestone | 0d | 2023-11-19 | 2023-11-19 | A1120 | 25.2d |  |  |
| A1970 |  | Completion of Asphlat Work | milestone | 0d | 2023-12-02 | 2023-12-02 | A1170 | 13d |  |  |
| A2100 |  | Completion of Service Road | milestone | 0d | 2023-12-09 | 2023-12-09 | A2290, A2180 | 5.2d |  |  |
| A1930 |  | Completion of Deck Slab | milestone | 0d | 2023-12-13 | 2023-12-13 | A1840, A1845, A1870 | 2d |  |  |
| A1980 |  | Completion of Ancillary Work | milestone | 0d | 2023-12-13 | 2023-12-13 | A1360, A1390, A1380, A1370, A1350, A1340, A1330 | 2d |  |  |
|  | 9 | **Construction Phase** |  |  | 2023-06-15 | 2023-12-13 |  |  |  |  |
|  | 4 | **Shop Drawings** |  |  | 2023-06-17 | 2023-08-06 |  |  |  |  |
| A1620 |  | Submission of Shop Drawings |  | 45d | 2023-06-17 | 2023-08-06 | A1990 SS+16d, A1470 | 0d |  |  |
| A1630 |  | Approval of Shop Drawings |  | 45d | 2023-06-17 | 2023-08-06 | A1620 SS | 0d |  |  |
|  | 7 | **Diversion Works** |  |  | 2023-06-15 | 2023-07-09 |  |  |  |  |
| A2300 |  | Diversion Works (in segments) |  | 21d | 2023-06-15 | 2023-07-09 | A1470 | 0d |  |  |
|  | 5 | **Structure Flyover** |  |  | 2023-06-17 | 2023-12-13 |  |  |  |  |
|  | 1 | **Sub Structure** |  |  | 2023-06-17 | 2023-07-21 |  |  |  |  |
|  | 1 | **Piles** |  |  | 2023-06-17 | 2023-07-21 |  |  |  |  |
| A1650 |  | Cast in place piles in normal soil (boring only) incl test pile |  | 27d | 2023-06-17 | 2023-07-16 | A1990 SS, A1630 SS, A2300 SS+2d, A1470 | 0d | 60,924,520 | B4 |
| A1660 |  | Cutting and Fixing of Reinforcement as per AASHTO M31 grade 60 |  | 27d | 2023-06-18 | 2023-07-18 | A1650 SS+1d | 0d | 458,465,606.82 | B4 |
| A1670 |  | Pouring of Concrete Class A-3 for pier piles(Under Ground) |  | 27d | 2023-06-21 | 2023-07-21 | A1660 SS+3d | 0d | 173,293,963.92 | B4 |

Notes:
- A1650: Expenses: (New Expense Item) 60924520
- A1660: Expenses: (New Expense Item) 458465607
- A1670: Expenses: (New Expense Item) 173293964

| ID | WBS | Activity | Duration | Start | Finish | Predecessors | Total float | Free float | Cost | Bill Wise |
| --- | --- | --- | --- | --- | --- | --- | --- | --- | --- | --- |
|  | 2 | **Super Structure** |  | 2023-06-18 | 2023-12-13 |  |  |  |  |  |
|  | 1 | **Pile Shaft** |  | 2023-07-10 | 2023-08-18 |  |  |  |  |  |
| A1730 |  | Cutting and Fixing of Reinforcement as per AASHTO M31 grade 60 | 35d | 2023-07-10 | 2023-08-17 | A1660 SS+14d, A1670 FF+24d | 0d |  | 96,575,037.95 | B4 |
| A1740 |  | Pouring of Concrete Class A-3 for pier (Elevated) | 35d | 2023-07-11 | 2023-08-18 | A1730 SS+1d, A1730 FF | 7d | 0d | 96,303,452.82 | B4 |
|  | 2 | **Transom** |  | 2023-07-31 | 2023-09-19 |  |  |  |  |  |
| A1750 |  | Cutting and Fixing of Reinforcement as per AASHTO M31 grade 60 | 45d | 2023-07-31 | 2023-09-15 | A1730 SS+19d | 0d |  | 282,132,681.12 | B4 |
| A1760 |  | Pouring of Concrete Class A-3 for transom (Elevated) | 45d | 2023-08-04 | 2023-09-19 | A1750 FF+4d, A1740 FF+25d | 0d |  | 96,303,452.82 | B4 |
|  | 3 | **Girders** |  | 2023-06-18 | 2023-10-27 |  |  |  |  |  |
| A1770 |  | Lean Concrete | 10d | 2023-06-18 | 2023-06-28 | A1630 SS+1d | 33.2d | 0d | 3,098,875.05 | B4 |
| A1780 |  | Cutting and Fixing of Reinforcement as per AASHTO M31 grade 60 incl formwork | 35d | 2023-06-18 | 2023-07-26 | A1770 SS+0.4d | 33.2d | 0d | 246,866,095.98 | B4 |
| A1790 |  | Concrete Class D-2 (Girder) | 35d | 2023-06-20 | 2023-07-30 | A1780 SS+2.4d | 33.2d | 0d | 205,598,142.72 | B4 |
| A1800 |  | Pre-Stressing Wire Strand (12.7 mm dia) | 35d | 2023-07-08 | 2023-08-15 | A1790 SS, A1790 FF+15d | 33.2d |  | 268,322,403.75 | B4 |
| A1810 |  | Elastomeric Bearing Pad | 8d | 2023-09-18 | 2023-09-26 | A1760 FF+7d, A1800 | 0d |  | 30,835,200 | B4 |
| A1820 |  | Launching of Girder | 30d | 2023-09-27 | 2023-10-27 | A1810, A2000, A1800 | 0d |  | 28,012,878 | B4 |
|  | 4 | **Deck Slab** |  | 2023-10-04 | 2023-12-13 |  |  |  |  |  |
| A1830 |  | Cutting and Fixing of Reinforcement as per AASHTO M31 grade 60 | 35d | 2023-10-04 | 2023-11-08 | A1820 SS+7d, A1630 | 0d |  | 94,044,227.04 | B4 |
| A1840 |  | Pouring of Concrete Class A-3 for deck slab (incl app slab) | 35d | 2023-10-08 | 2023-11-12 | A1830 SS+4d | 0d |  | 45,951,902 | B4 |
| A1850 |  | Neoprene rubber joint filler with bitumastic joint seal | 13d | 2023-11-07 | 2023-11-19 | A1840 SS+30d | 8d |  | 3,350,186.4 | B4 |
| A1845 |  | Reinforcement and Concrete pouring of Approach Slab | 7d | 2023-11-14 | 2023-11-21 | A1840 SS+37d | 0d |  | 45,951,902.42 |  |
| A1860 |  | Expansion joint with two extruded aluminium alloy sections for 50 mm movement | 12d | 2023-11-28 | 2023-12-10 | A1170 SS+7d, A1850 | 0d |  | 32,421,600 | B4 |
| A1870 |  | Jointing and fixing 4" dia PVC drain pipe including | 4d | 2023-12-09 | 2023-12-13 | A1170 FS+3d, A1860 FF+3d | 0d |  | 8,892,000 | B4 |
|  | 3 | **Retaining Wall** |  | 2023-06-22 | 2023-08-25 |  |  |  |  |  |
| A1000 |  | Structural Excavation in Common Material | 12d | 2023-06-22 | 2023-07-07 | A1650 SS, A1630 SS, A2300 SS+7d | 2.2d | 0d | 1,612,217.28 | B5 |
| A1010 |  | Lean Concrete | 15d | 2023-06-26 | 2023-07-14 | A1000 SS+4d | 2.2d | 0d | 6,364,708.11 | B5 |
| A1020 |  | Reinforcement as per AASHTO M-31 Grade 60 | 37d | 2023-07-02 | 2023-08-10 | A1010 SS+3.2d | 2.2d | 0d | 303,175,971.9 | B5 |
| A1030 |  | Concrete Class A3 | 37d | 2023-07-05 | 2023-08-13 | A1020 SS+3.6d | 2.2d | 0d | 171,559,973.7 | B5 |
| A1040 |  | Common Backfill | 15d | 2023-08-09 | 2023-08-25 | A1030 SS+33d | 2.2d | 0d | 422,222.37 | B5 |

Notes:
- A1730: Expenses: (New Expense Item) 96575038
- A1740: Expenses: (New Expense Item) 96303453
- A1750: Expenses: (New Expense Item) 282132681
- A1760: Expenses: (New Expense Item) 96303453
- A1770: Expenses: (New Expense Item) 3098875
- A1780: Expenses: (New Expense Item) 246866096
- A1790: Expenses: (New Expense Item) 205598143
- A1800: Expenses: (New Expense Item) 268322404
- A1810: Expenses: (New Expense Item) 30835200
- A1820: Expenses: (New Expense Item) 28012878
- A1830: Expenses: (New Expense Item) 94044227
- A1840: Expenses: (New Expense Item) 45951902
- A1850: Expenses: (New Expense Item) 3350186
- A1845: Expenses: (New Expense Item) 45951902
- A1860: Expenses: (New Expense Item) 32421600
- A1870: Expenses: (New Expense Item) 8892000
- A1000: Expenses: (New Expense Item) 1612217
- A1010: Expenses: (New Expense Item) 6364708
- A1020: Expenses: (New Expense Item) 303175972
- A1030: Expenses: (New Expense Item) 171559974
- A1040: Expenses: (New Expense Item) 422222

| ID | WBS | Activity | Duration | Start | Finish | Predecessors | Total float | Free float | Cost | Bill Wise |
| --- | --- | --- | --- | --- | --- | --- | --- | --- | --- | --- |
|  | 1 | **Road Works** |  | 2023-08-12 | 2023-12-02 |  |  |  |  |  |
|  | 1 | **Earthwork** |  | 2023-08-12 | 2023-09-24 |  |  |  |  |  |
| A1050 |  | Removal of Trees 150-300mm Girth | 2d | 2023-08-12 | 2023-08-15 | A1630, A1060 SF-10d | 120.2d |  | 22,800 | B1 |
| A1060 |  | Excavate unsuitable Common Material | 15d | 2023-08-25 | 2023-09-09 | A1040 SS+15d | 2.2d | 0d | 2,464,484.5 | B1 |
| A1070 |  | Formation of Embankment from borrow exacvation in Common Material | 25d | 2023-08-30 | 2023-09-24 | A1060 SS+5d | 2.2d | 0d | 18,956,223.44 | B1 |
| A1080 |  | Formation of Embankment from Structural exacvation in Common Material | 25d | 2023-08-30 | 2023-09-24 | A1060 SS+5d | 5.2d | 0d | 500,334.61 | B1 |
|  | 2 | **Subbase and Base Course** |  | 2023-09-20 | 2023-10-17 |  |  |  |  |  |
| A1090 |  | Improved Subgrade | 20d | 2023-09-20 | 2023-10-11 | A1070 SS+21d, A1080 SS+18d, A1630 | 2.2d | 0d | 3,363,164.6 | B2 |
| A1100 |  | Granular Subbase | 20d | 2023-09-21 | 2023-10-12 | A1090 SS+1d | 2.2d | 0d | 11,067,238.56 | B2 |
| A1110 |  | Aggregate Base Course | 23d | 2023-09-23 | 2023-10-17 | A1100 SS+2d | 2.2d | 0d | 9,486,204.48 | B2 |
|  | 3 | **Surface Course & Pavement** |  | 2023-11-01 | 2023-12-02 |  |  |  |  |  |
| A1120 |  | Asphaltic Base Course Plant mix (Class A) | 18d | 2023-11-01 | 2023-11-19 | A1110 SS+38d | 2.2d | 0d | 39,016,306.59 | B2 |
| A1170 |  | Asphalt concrete for wearing course (Class A) | 11d | 2023-11-21 | 2023-12-02 | A1840 FS+5d, A1845, A1120 SS+11d | 0d |  | 41,243,652.69 | B3 |
|  | 6 | **Service Road** |  | 2023-10-15 | 2023-12-09 |  |  |  |  |  |
| A2121 |  | Breaking of Existing Road Pavement Structure | 8d | 2023-10-15 | 2023-10-23 | A1630 SS, A1060 SS+50d | 3.2d | 0d | 8,831,680.89 | B2 |
| A2122 |  | Scarification of Existing Road Pavement | 8d | 2023-10-15 | 2023-10-23 | A1630 SS, A2121 SS | 3.2d | 0d | 3,885,177 | B2 |
|  | 1 | **West Side Service Road** |  | 2023-10-15 | 2023-12-09 |  |  |  |  |  |
| A2110 |  | Shifting of Services | 15d | 2023-10-15 | 2023-10-30 | A2122 SS | 3.2d | 0d |  |  |
| A2120 |  | Setting Out/Topographic Survey | 5d | 2023-10-20 | 2023-10-25 | A2110 SS+5d | 3.2d | 0d |  |  |
| A2135 |  | Formation of Embankment from borrow exacvation in Common Material | 17d | 2023-10-24 | 2023-11-10 | A2120 SS+4d, A2121 | 3.2d | 0d | 18,956,223.44 | B1 |
| A2136 |  | Formation of Embankment from Structural exacvation in Common Material | 17d | 2023-10-24 | 2023-11-10 | A2120 SS+4d, A2121 | 3.2d | 0d | 500,334.61 | B1 |
| A2140 |  | Preparation of Sub Grade | 20d | 2023-10-27 | 2023-11-16 | A2135 SS+3d, A2136 SS+3d | 3.2d | 0d | 3,363,164.6 |  |
| A2150 |  | Preparation of Sub base | 23d | 2023-11-01 | 2023-11-24 | A2140 SS+5d | 3.2d | 0d | 11,067,238.56 |  |
| A2160 |  | Preparation of Aggregate base | 16d | 2023-11-10 | 2023-11-26 | A2150 SS+9d | 3.2d | 0d | 9,486,204.48 |  |
| A2170 |  | Laying of Asphltic Base Course incl prime Coat | 10d | 2023-11-28 | 2023-12-08 | A2160 SS+18d, A1110, A1120 SS | 3.2d | 0d | 39,016,306.59 |  |
| A2180 |  | Laying of Asphaltic Wearing Course incl Tack Coat | 10d | 2023-11-29 | 2023-12-09 | A2170 SS+1d | 3.2d | 0d | 41,243,652.69 |  |

Notes:
- A1050: Expenses: (New Expense Item) 22800
- A1060: Expenses: (New Expense Item) 2464484
- A1070: Expenses: (New Expense Item) 18956223
- A1080: Expenses: (New Expense Item) 500335
- A1090: Expenses: (New Expense Item) 3363165
- A1100: Expenses: (New Expense Item) 11067239
- A1110: Expenses: (New Expense Item) 9486204
- A1120: Expenses: (New Expense Item) 39016307
- A1170: Expenses: (New Expense Item) 41243653
- A2121: Expenses: (New Expense Item) 8831681
- A2122: Expenses: (New Expense Item) 3885177
- A2135: Expenses: (New Expense Item) 18956223
- A2136: Expenses: (New Expense Item) 500335
- A2140: Expenses: (New Expense Item) 3363165
- A2150: Expenses: (New Expense Item) 11067239
- A2160: Expenses: (New Expense Item) 9486204
- A2170: Expenses: (New Expense Item) 39016307
- A2180: Expenses: (New Expense Item) 41243653

| ID | WBS | Activity | Duration | Start | Finish | Predecessors | Total float | Free float | Cost | Bill Wise |
| --- | --- | --- | --- | --- | --- | --- | --- | --- | --- | --- |
|  | 2 | **East Side Service Road** |  | 2023-10-15 | 2023-12-09 |  |  |  |  |  |
| A2217 |  | Shifting of Services | 15d | 2023-10-15 | 2023-10-30 | A2010 SS+15d, A2110 SS | 3.2d | 0d |  |  |
| A2220 |  | Setting Out/Topographic Survey | 5d | 2023-10-23 | 2023-10-28 | A2217 SS+8d | 9.2d | 6d |  |  |
| A2230 |  | Formation of Embankment from borrow exacvation in Common Material | 17d | 2023-10-30 | 2023-11-16 | A2220 SS+1d, A2122, A2217 | 3.2d | 0d | 18,956,223.44 | B1 |
| A2240 |  | Formation of Embankment from Structural exacvation in Common Material | 17d | 2023-10-30 | 2023-11-16 | A2220 SS+1d, A2122, A2217 | 3.2d | 0d | 500,334.61 | B1 |
| A2250 |  | Preparation of Sub Grade | 20d | 2023-11-01 | 2023-11-21 | A2230 SS+2d, A2240 SS+2d | 3.2d | 0d | 3,363,164.6 |  |
| A2260 |  | Preparation of Sub base | 20d | 2023-11-06 | 2023-11-26 | A2250 SS+5d | 3.2d | 0d | 11,067,238.56 |  |
| A2270 |  | Preparation of Aggregate base | 16d | 2023-11-15 | 2023-12-01 | A2260 SS+9d | 3.2d | 0d | 9,486,204.48 |  |
| A2280 |  | Laying of Asphltic Base Course incl Prime Coat | 10d | 2023-11-28 | 2023-12-08 | A2270 SS+13d, A2170 SS | 3.2d | 0d | 39,016,306.59 |  |
| A2290 |  | Laying of Asphaltic Wearing Course incl tack coat | 10d | 2023-11-29 | 2023-12-09 | A2280 SS+1d | 3.2d | 0d | 41,243,652.69 |  |
|  | 2 | **Ancillary Works** |  | 2023-11-01 | 2023-12-13 |  |  |  |  |  |
|  | 3 | **New Jersey Barrier** |  | 2023-11-01 | 2023-12-13 |  |  |  |  |  |
| A1400 |  | Dismantling of Structure and Obstractions | 7d | 2023-11-01 | 2023-11-08 | A1120 SS | 34.2d |  | 2,213,000 | B6 |
| A1410 |  | RCC New Jersey Barrier (In-situ) for median ; double face (including reinforcement) | 12d | 2023-11-25 | 2023-12-07 | A1170 SS+4d, A1630 | 0d |  | 60,303,311.91 | B6 |
| A1420 |  | Reinforcement as per AASHTO M31 grade 60 (Flyover) | 12d | 2023-11-27 | 2023-12-09 | A1170 SS+6d | 0d |  | 33,242,553.9 | B6 |
| A1430 |  | Concrete Class A-3 for Barriers (Flyover) | 15d | 2023-11-28 | 2023-12-13 | A1410 SS+3d | 0d |  | 18,812,005.26 | B6 |
| A1460 |  | Steel Fence over New Jersey Barrier | 12d | 2023-12-01 | 2023-12-13 | A1430 SS+3d, A1410 SS | 0d |  | 7,695,000 | B6 |
| A1440 |  | Concrete Class-B | 11d | 2023-12-02 | 2023-12-13 | A1420 SS+5d | 0d |  | 10,334,545.2 | B6 |
|  | 1 | **Traffic Road Signs** |  | 2023-11-17 | 2023-12-10 |  |  |  |  |  |
| A1330 |  | Traffic Road Sign Category 1 | 23d | 2023-11-17 | 2023-12-10 | A1120 SS+16d, A1630 | 2.2d | 0d | 159,600 | B6 |
| A1340 |  | Traffic Road Sign Category 2 | 23d | 2023-11-17 | 2023-12-10 | A1330 SS | 2.2d | 0d | 906,984 | B6 |
| A1350 |  | Traffic Road Sign Category 3b | 23d | 2023-11-17 | 2023-12-10 | A1340 SS | 2.2d | 0d | 177,498 | B6 |
| A1360 |  | Traffic Road Sign Category 3c | 23d | 2023-11-17 | 2023-12-10 | A1350 SS | 2.2d |  | 695,400 | B6 |
|  | 2 | **Pavement Marking and Studs** |  | 2023-12-04 | 2023-12-13 |  |  |  |  |  |
| A1370 |  | Pavement markings with white thermoplastic paint Service Roads (Continuous 20 cm) | 9d | 2023-12-04 | 2023-12-13 | A1170 FS+2d, A1630 | 0d |  | 2,954,000 | B6 |
| A1380 |  | Pavement markings with white thermoplastic paint Service Roads (Broken 20 cm) | 9d | 2023-12-04 | 2023-12-13 | A1170 FS+2d | 0d |  | 738,500 | B6 |
| A1390 |  | Reflectorised Aluminium Pavement Stud raised profile type - Double (Red / Green / White / Amber color) | 9d | 2023-12-04 | 2023-12-13 | A1170 FS+2d | 0d |  | 1,023,100 | B6 |

Notes:
- A2230: Expenses: (New Expense Item) 18956223
- A2240: Expenses: (New Expense Item) 500335
- A2250: Expenses: (New Expense Item) 3363165
- A2260: Expenses: (New Expense Item) 11067239
- A2270: Expenses: (New Expense Item) 9486204
- A2280: Expenses: (New Expense Item) 39016307
- A2290: Expenses: (New Expense Item) 41243653
- A1400: Expenses: (New Expense Item) 2213000
- A1410: Expenses: (New Expense Item) 60303312
- A1420: Expenses: (New Expense Item) 33242554
- A1430: Expenses: (New Expense Item) 18812005
- A1460: Expenses: (New Expense Item) 7695000
- A1440: Expenses: (New Expense Item) 10334545
- A1330: Expenses: (New Expense Item) 159600
- A1340: Expenses: (New Expense Item) 906984
- A1350: Expenses: (New Expense Item) 177498
- A1360: Expenses: (New Expense Item) 695400
- A1370: Expenses: (New Expense Item) 2954000
- A1380: Expenses: (New Expense Item) 738500
- A1390: Expenses: (New Expense Item) 1023100

| ID | WBS | Activity | Duration | Start | Finish | Predecessors | Total float | Free float | Cost | Bill Wise |
| --- | --- | --- | --- | --- | --- | --- | --- | --- | --- | --- |
|  | 3 | **Bill no. 07 General Items** |  | 2023-06-01 | 2023-12-06 |  |  |  |  |  |
| A1180 |  | Provision of Survey Equipment and allied instruments | 10d | 2023-06-01 | 2023-06-11 |  | 7d | 0d | 2,006,400 | B7 |
| A1200 |  | Provide Engineers's and Employer's Representative rental Field office | 8d | 2023-06-01 | 2023-06-09 |  | 178d | 0d | 1,805,760 | B7 |
| A1210 |  | Provide Engineers's and Employer's Representative rental residential accomodation | 10d | 2023-06-01 | 2023-06-11 |  | 19d | 0d | 7,387,200 | B7 |
| A1220 |  | Furnish and Equip Employer's/Engineer's representative field offices, residence | 19d | 2023-06-01 | 2023-06-20 | A1210 SS | 19d | 0d | 2,097,600 | B7 |
| A1240 |  | Provide Material testing laboratory | 15d | 2023-06-01 | 2023-06-15 |  | 173d |  | 3,465,600 | B7 |
| A1250 |  | Equip & Furnish Material testing laboratory | 15d | 2023-06-01 | 2023-06-15 |  | 19d | 0d | 1,915,200 | B7 |
| A1260 |  | Maintain Laboratory | 169d | 2023-06-01 | 2023-11-24 | A1250 SS | 19d |  | 4,104,000 | B7 |
| A1270 |  | Provide vehicles for Engineer and Employer (Toyota Corolla Gli 1.3) | 10d | 2023-06-01 | 2023-06-11 |  | 8d | 0d | 20,520,000 | B7 |
| A1280 |  | Provide vehicles for Engineer and Employer (Toyota Hilux 4x2 Single Cab | 10d | 2023-06-01 | 2023-06-11 |  | 8d | 0d | 18,240,000 | B7 |
| A1290 |  | Running and maintenance of Engineer's and Employer's Transport | 180d | 2023-06-01 | 2023-12-05 | A1280 SS, A1270 SS | 8d |  | 17,955,000 | B7 |
| A1300 |  | Employing Trainee Engineer's including Boarding, Lodging and related facilities to the Trainee Engineers | 180d | 2023-06-01 | 2023-12-05 |  | 8d |  | 2,462,400 | B7 |
| A1310 |  | Control and Protection of Traffic | 180d | 2023-06-01 | 2023-12-05 |  | 8d |  | 2,462,400 | B7 |
| A1190 |  | Maintenance of survey instrument and provide teams for survey | 180d | 2023-06-02 | 2023-12-06 | A1180 SS+1d | 7d |  | 1,805,760 | B7 |
| A1230 |  | Maintenance of Engineer`s and Employer's representative Field office, residence | 150d | 2023-06-20 | 2023-11-24 | A1220 | 19d |  | 7,387,200 | B7 |
|  | 4 | **Project Completion and Handover** |  | 2023-12-13 | 2023-12-15 |  |  |  |  |  |
| A2190 |  | Final Inspection, Snagging and De Snagging | 1d | 2023-12-13 | 2023-12-14 | A1390, A1380, A1370, A1360, A1350, A1340, A1330, A1460, A1170, A1860, A1870, A1500, A1510, A1520, A1530, A1540, A1550, A1570, A1590, A1610, A1190, A1230, A1240, A1260, A1290, A1300, A1310, A1400, A2290, A2180, A1440 | 0d |  |  |  |
| A2200 |  | Project Handover | 1d | 2023-12-14 | 2023-12-15 | A2190, A1120 | 0d |  |  |  |

Notes:
- A1180: Expenses: (New Expense Item) 2006400
- A1200: Expenses: (New Expense Item) 1805760
- A1210: Expenses: (New Expense Item) 7387200
- A1220: Expenses: (New Expense Item) 2097600
- A1240: Expenses: (New Expense Item) 3465600
- A1250: Expenses: (New Expense Item) 1915200
- A1260: Expenses: (New Expense Item) 4104000
- A1270: Expenses: (New Expense Item) 20520000
- A1280: Expenses: (New Expense Item) 18240000
- A1290: Expenses: (New Expense Item) 17955000
- A1300: Expenses: (New Expense Item) 2462400
- A1310: Expenses: (New Expense Item) 2462400
- A1190: Expenses: (New Expense Item) 1805760
- A1230: Expenses: (New Expense Item) 7387200

## Activity codes

| Code | Value | Meaning |
| --- | --- | --- |
| Bill Wise | B1 | Bill no1- EarthWork |
| Bill Wise | B2 | Bill no 2- Subbase and Base Course |
| Bill Wise | B3 | Bill no 3- Surface Course and Pavement |
| Bill Wise | B4 | Bill no 4- Structure Flyover |
| Bill Wise | B5 | Bill no 5- Retaning Wall & Culverts |
| Bill Wise | B6 | Bill no 6- Ancillary Works |
| Bill Wise | B7 | Bill no 7- General Items |
