# Bridge #4 at RD 181+00

Schedule from Primavera P6, 2023-08-24 to 2023-11-28, data date 2023-08-23.

## Calendars

- 7-Day Workweek: Mon-Sun 08:00-16:00.

## Schedule

| ID | WBS | Activity | Duration | Start | Finish | Predecessors | Total float | Free float |
| --- | --- | --- | --- | --- | --- | --- | --- | --- |
|  | 1 | **Left Carriageway** |  | 2023-08-24 | 2023-11-18 |  |  |  |
|  | 1 | **AB1** |  | 2023-08-24 | 2023-11-11 |  |  |  |
|  | 1 | **Piles** |  | 2023-08-24 | 2023-09-12 |  |  |  |
| A1000 |  | Pile AB1-6 | 2d | 2023-08-24 | 2023-08-25 |  | 6d | 0d |
| A1010 |  | Pile AB1-7 | 2d | 2023-08-26 | 2023-08-27 | A1000 | 6d | 0d |
| A1020 |  | Pile AB1-8 | 2d | 2023-08-28 | 2023-08-29 | A1010 | 6d | 0d |
| A1030 |  | Pile AB1-9 | 2d | 2023-08-30 | 2023-08-31 | A1020 | 6d | 0d |
| A1040 |  | Pile AB1-10 | 2d | 2023-09-01 | 2023-09-02 | A1030 | 6d | 0d |
| A1050 |  | Pile AB1-16 | 2d | 2023-09-03 | 2023-09-04 | A1040 | 6d | 0d |
| A1060 |  | Pile AB1-17 | 2d | 2023-09-05 | 2023-09-06 | A1050 | 6d | 0d |
| A1070 |  | Pile AB1-18 | 2d | 2023-09-07 | 2023-09-08 | A1060 | 6d | 0d |
| A1080 |  | Pile AB1-19 | 2d | 2023-09-09 | 2023-09-10 | A1070 | 6d | 0d |
| A1090 |  | Pile AB1-20 | 2d | 2023-09-11 | 2023-09-12 | A1080 | 6d | 0d |
|  | 11 | **Pile Cap** |  | 2023-09-13 | 2023-09-30 |  |  |  |
| A1100 |  | Excavation | 7d | 2023-09-13 | 2023-09-19 | A1090 | 6d | 0d |
| A1110 |  | Lean | 1d | 2023-09-20 | 2023-09-20 | A1100 | 6d | 0d |
| A1111 |  | Reinforcement | 7d | 2023-09-21 | 2023-09-27 | A1110 | 6d | 0d |
| A1120 |  | Concrete | 3d | 2023-09-28 | 2023-09-30 | A1111 | 6d | 0d |
|  | 4 | **Abutment Wall** |  | 2023-10-01 | 2023-10-04 |  |  |  |
| A1130 |  | Reinforcement | 2d | 2023-10-01 | 2023-10-02 | A1120 | 6d | 0d |
| A1140 |  | Formwork and Concrete | 2d | 2023-10-03 | 2023-10-04 | A1130 | 6d | 0d |
|  | 3 | **Transom** |  | 2023-10-05 | 2023-10-12 |  |  |  |
| A1141 |  | Bottom Formwork | 3d | 2023-10-05 | 2023-10-07 | A1140 | 6d | 0d |
| A1150 |  | Reinforcement | 2d | 2023-10-08 | 2023-10-09 | A1141 | 6d | 0d |
| A1160 |  | Formwork and Concrete | 3d | 2023-10-10 | 2023-10-12 | A1150 | 6d | 0d |

| ID | WBS | Activity | Duration | Start | Finish | Predecessors | Total float | Free float |
| --- | --- | --- | --- | --- | --- | --- | --- | --- |
|  | 2 | **Bearing Pads Seats** |  | 2023-10-13 | 2023-10-13 |  |  |  |
| A1170 |  | Formwork and Concrete | 1d | 2023-10-13 | 2023-10-13 | A1160 | 6d |  |
|  | 5 | **Bearing Pads** |  |  |  |  |  |  |
|  | 6 | **Back Wall** |  | 2023-10-29 | 2023-11-02 |  |  |  |
| A1180 |  | Reinforcement | 2d | 2023-10-29 | 2023-10-30 | A1500 | 17d | 0d |
| A1190 |  | Formwork and Concrete | 3d | 2023-10-31 | 2023-11-02 | A1180 | 17d | 0d |
|  | 7 | **Wing Wall** |  | 2023-10-13 | 2023-11-05 |  |  |  |
| A1200 |  | Pour 1 | 3d | 2023-10-13 | 2023-10-15 | A1160 | 35d | 18d |
| A1210 |  | Pour 2 | 3d | 2023-11-03 | 2023-11-05 | A1200, A1190 | 17d | 0d |
|  | 8 | **Approach Slab** |  | 2023-11-06 | 2023-11-11 |  |  |  |
| A1220 |  | Lean | 1d | 2023-11-06 | 2023-11-06 | A1210 | 17d | 0d |
| A1230 |  | Reinforcement | 3d | 2023-11-07 | 2023-11-09 | A1220 | 17d | 0d |
| A1240 |  | Formwork and Concrete | 2d | 2023-11-10 | 2023-11-11 | A1230 | 17d |  |
|  | 2 | **AB2** |  | 2023-08-24 | 2023-11-11 |  |  |  |
|  | 1 | **Piles** |  | 2023-08-24 | 2023-09-12 |  |  |  |
| A1250 |  | Pile AB2-6 | 2d | 2023-08-24 | 2023-08-25 |  | 6d | 0d |
| A1260 |  | Pile AB2-7 | 2d | 2023-08-26 | 2023-08-27 | A1250 | 6d | 0d |
| A1270 |  | Pile AB2-8 | 2d | 2023-08-28 | 2023-08-29 | A1260 | 6d | 0d |
| A1280 |  | Pile AB2-9 | 2d | 2023-08-30 | 2023-08-31 | A1270 | 6d | 0d |
| A1290 |  | Pile AB2-10 | 2d | 2023-09-01 | 2023-09-02 | A1280 | 6d | 0d |
| A1300 |  | Pile AB2-16 | 2d | 2023-09-03 | 2023-09-04 | A1290 | 6d | 0d |
| A1310 |  | Pile AB2-17 | 2d | 2023-09-05 | 2023-09-06 | A1300 | 6d | 0d |
| A1320 |  | Pile AB2-18 | 2d | 2023-09-07 | 2023-09-08 | A1310 | 6d | 0d |
| A1330 |  | Pile AB2-19 | 2d | 2023-09-09 | 2023-09-10 | A1320 | 6d | 0d |
| A1340 |  | Pile AB2-20 | 2d | 2023-09-11 | 2023-09-12 | A1330 | 6d | 0d |

| ID | WBS | Activity | Duration | Start | Finish | Predecessors | Total float | Free float |
| --- | --- | --- | --- | --- | --- | --- | --- | --- |
|  | 11 | **Pile Cap** |  | 2023-09-13 | 2023-09-30 |  |  |  |
| A1350 |  | Excavation | 7d | 2023-09-13 | 2023-09-19 | A1340 | 6d | 0d |
| A1360 |  | Lean | 1d | 2023-09-20 | 2023-09-20 | A1350 | 6d | 0d |
| A1361 |  | Reinforcement | 7d | 2023-09-21 | 2023-09-27 | A1360 | 6d | 0d |
| A1370 |  | Concrete | 3d | 2023-09-28 | 2023-09-30 | A1361 | 6d | 0d |
|  | 4 | **Abutment Wall** |  | 2023-10-01 | 2023-10-04 |  |  |  |
| A1380 |  | Reinforcement | 2d | 2023-10-01 | 2023-10-02 | A1370 | 6d | 0d |
| A1390 |  | Formwork and Concrete | 2d | 2023-10-03 | 2023-10-04 | A1380 | 6d | 0d |
|  | 3 | **Transom** |  | 2023-10-05 | 2023-10-12 |  |  |  |
| A1391 |  | Bottom Formwork | 3d | 2023-10-05 | 2023-10-07 | A1390 | 6d | 0d |
| A1400 |  | Reinforcement | 2d | 2023-10-08 | 2023-10-09 | A1391 | 6d | 0d |
| A1410 |  | Formwork and Concrete | 3d | 2023-10-10 | 2023-10-12 | A1400 | 6d | 0d |
|  | 2 | **Bearing Pads Seats** |  | 2023-10-13 | 2023-10-13 |  |  |  |
| A1420 |  | Formwork and Concrete | 1d | 2023-10-13 | 2023-10-13 | A1410 | 6d |  |
|  | 5 | **Bearing Pads** |  |  |  |  |  |  |
|  | 6 | **Back Wall** |  | 2023-10-29 | 2023-11-02 |  |  |  |
| A1430 |  | Reinforcement | 2d | 2023-10-29 | 2023-10-30 | A1500 | 17d | 0d |
| A1440 |  | Formwork and Concrete | 3d | 2023-10-31 | 2023-11-02 | A1430 | 17d | 0d |
|  | 7 | **Wing Wall** |  | 2023-10-13 | 2023-11-05 |  |  |  |
| A1450 |  | Pour 1 | 3d | 2023-10-13 | 2023-10-15 | A1410 | 35d | 18d |
| A1460 |  | Pour 2 | 3d | 2023-11-03 | 2023-11-05 | A1450, A1440 | 17d | 0d |
|  | 8 | **Approach Slab** |  | 2023-11-06 | 2023-11-11 |  |  |  |
| A1470 |  | Lean | 1d | 2023-11-06 | 2023-11-06 | A1460 | 17d | 0d |
| A1480 |  | Reinforcement | 3d | 2023-11-07 | 2023-11-09 | A1470 | 17d | 0d |
| A1490 |  | Formwork and Concrete | 2d | 2023-11-10 | 2023-11-11 | A1480 | 17d |  |

| ID | WBS | Activity | Duration | Start | Finish | Predecessors | Total float | Free float |
| --- | --- | --- | --- | --- | --- | --- | --- | --- |
|  | 3 | **Girder Launching** |  | 2023-10-27 | 2023-10-28 |  |  |  |
| A1500 |  | Launching of Girder 1 to 6 | 2d | 2023-10-27 | 2023-10-28 | A1170 FS+7d, A1420 FS+7d, A2290 FS+28d | 0d |  |
|  | 7 | **Diaphragms** |  | 2023-10-29 | 2023-11-07 |  |  |  |
| A2160 |  | Reinforcement | 5d | 2023-10-29 | 2023-11-02 | A1500 | 0d |  |
| A2170 |  | Formwork and Concrete | 5d | 2023-11-03 | 2023-11-07 | A2160 | 0d |  |
|  | 4 | **Deck Slab** |  | 2023-11-08 | 2023-11-18 |  |  |  |
| A1559 |  | Bottom Formwork | 7d | 2023-11-08 | 2023-11-14 | A2170 | 0d |  |
| A1560 |  | Reinforcement | 2d | 2023-11-15 | 2023-11-16 | A1559 | 0d |  |
| A1570 |  | Formwork and Concrete | 2d | 2023-11-17 | 2023-11-18 | A1560 | 0d |  |
|  | 5 | **Right Carriageway** |  | 2023-08-24 | 2023-11-18 |  |  |  |
|  | 1 | **AB1** |  | 2023-08-24 | 2023-11-11 |  |  |  |
|  | 1 | **Piles** |  | 2023-08-24 | 2023-09-12 |  |  |  |
| A1580 |  | Pile AB1-1 | 2d | 2023-08-24 | 2023-08-25 |  | 6d | 0d |
| A1590 |  | Pile AB1-2 | 2d | 2023-08-26 | 2023-08-27 | A1580 | 6d | 0d |
| A1600 |  | Pile AB1-3 | 2d | 2023-08-28 | 2023-08-29 | A1590 | 6d | 0d |
| A1610 |  | Pile AB1-4 | 2d | 2023-08-30 | 2023-08-31 | A1600 | 6d | 0d |
| A1620 |  | Pile AB1-5 | 2d | 2023-09-01 | 2023-09-02 | A1610 | 6d | 0d |
| A1630 |  | Pile AB1-11 | 2d | 2023-09-03 | 2023-09-04 | A1620 | 6d | 0d |
| A1640 |  | Pile AB1-12 | 2d | 2023-09-05 | 2023-09-06 | A1630 | 6d | 0d |
| A1650 |  | Pile AB1-13 | 2d | 2023-09-07 | 2023-09-08 | A1640 | 6d | 0d |
| A1660 |  | Pile AB1-14 | 2d | 2023-09-09 | 2023-09-10 | A1650 | 6d | 0d |
| A1670 |  | Pile AB1-15 | 2d | 2023-09-11 | 2023-09-12 | A1660 | 6d | 0d |
|  | 11 | **Pile Cap** |  | 2023-09-13 | 2023-09-30 |  |  |  |
| A1680 |  | Excavation | 7d | 2023-09-13 | 2023-09-19 | A1670 | 6d | 0d |
| A1690 |  | Lean | 1d | 2023-09-20 | 2023-09-20 | A1680 | 6d | 0d |
| A1691 |  | Reinforcement | 7d | 2023-09-21 | 2023-09-27 | A1690 | 6d | 0d |
| A1700 |  | Concrete | 3d | 2023-09-28 | 2023-09-30 | A1691 | 6d | 0d |

| ID | WBS | Activity | Duration | Start | Finish | Predecessors | Total float | Free float |
| --- | --- | --- | --- | --- | --- | --- | --- | --- |
|  | 4 | **Abutment Wall** |  | 2023-10-01 | 2023-10-04 |  |  |  |
| A1710 |  | Reinforcement | 2d | 2023-10-01 | 2023-10-02 | A1700 | 6d | 0d |
| A1720 |  | Formwork and Concrete | 2d | 2023-10-03 | 2023-10-04 | A1710 | 6d | 0d |
|  | 3 | **Transom** |  | 2023-10-05 | 2023-10-12 |  |  |  |
| A1721 |  | Bottom Formwork | 3d | 2023-10-05 | 2023-10-07 | A1720 | 6d | 0d |
| A1730 |  | Reinforcement | 2d | 2023-10-08 | 2023-10-09 | A1721 | 6d | 0d |
| A1740 |  | Formwork and Concrete | 3d | 2023-10-10 | 2023-10-12 | A1730 | 6d | 0d |
|  | 2 | **Bearing Pads Seats** |  | 2023-10-13 | 2023-10-13 |  |  |  |
| A1750 |  | Formwork and Concrete | 1d | 2023-10-13 | 2023-10-13 | A1740 | 6d |  |
|  | 5 | **Bearing Pads** |  |  |  |  |  |  |
|  | 6 | **Back Wall** |  | 2023-10-29 | 2023-11-02 |  |  |  |
| A1760 |  | Reinforcement | 2d | 2023-10-29 | 2023-10-30 | A2080 | 17d | 0d |
| A1770 |  | Formwork and Concrete | 3d | 2023-10-31 | 2023-11-02 | A1760 | 17d | 0d |
|  | 7 | **Wing Wall** |  | 2023-10-13 | 2023-11-05 |  |  |  |
| A1780 |  | Pour 1 | 3d | 2023-10-13 | 2023-10-15 | A1740 | 35d | 18d |
| A1790 |  | Pour 2 | 3d | 2023-11-03 | 2023-11-05 | A1780, A1770 | 17d | 0d |
|  | 8 | **Approach Slab** |  | 2023-11-06 | 2023-11-11 |  |  |  |
| A1800 |  | Lean | 1d | 2023-11-06 | 2023-11-06 | A1790 | 17d | 0d |
| A1810 |  | Reinforcement | 3d | 2023-11-07 | 2023-11-09 | A1800 | 17d | 0d |
| A1820 |  | Formwork and Concrete | 2d | 2023-11-10 | 2023-11-11 | A1810 | 17d |  |
|  | 2 | **AB2** |  | 2023-08-24 | 2023-11-02 |  |  |  |
|  | 1 | **Piles** |  | 2023-08-24 | 2023-09-12 |  |  |  |
| A1830 |  | Pile AB2-1 | 2d | 2023-08-24 | 2023-08-25 |  | 6d | 0d |
| A1840 |  | Pile AB2-2 | 2d | 2023-08-26 | 2023-08-27 | A1830 | 6d | 0d |
| A1850 |  | Pile AB2-3 | 2d | 2023-08-28 | 2023-08-29 | A1840 | 6d | 0d |
| A1860 |  | Pile AB2-4 | 2d | 2023-08-30 | 2023-08-31 | A1850 | 6d | 0d |
| A1870 |  | Pile AB2-5 | 2d | 2023-09-01 | 2023-09-02 | A1860 | 6d | 0d |
| A1880 |  | Pile AB2-11 | 2d | 2023-09-03 | 2023-09-04 | A1870 | 6d | 0d |
| A1890 |  | Pile AB2-12 | 2d | 2023-09-05 | 2023-09-06 | A1880 | 6d | 0d |
| A1900 |  | Pile AB2-13 | 2d | 2023-09-07 | 2023-09-08 | A1890 | 6d | 0d |
| A1910 |  | Pile AB2-14 | 2d | 2023-09-09 | 2023-09-10 | A1900 | 6d | 0d |
| A1920 |  | Pile AB2-15 | 2d | 2023-09-11 | 2023-09-12 | A1910 | 6d | 0d |

| ID | WBS | Activity | Duration | Start | Finish | Predecessors | Total float | Free float |
| --- | --- | --- | --- | --- | --- | --- | --- | --- |
|  | 11 | **Pile Cap** |  | 2023-09-13 | 2023-09-30 |  |  |  |
| A1930 |  | Excavation | 7d | 2023-09-13 | 2023-09-19 | A1920 | 6d | 0d |
| A1940 |  | Lean | 1d | 2023-09-20 | 2023-09-20 | A1930 | 6d | 0d |
| A1941 |  | Reinforcement | 7d | 2023-09-21 | 2023-09-27 | A1940 | 6d | 0d |
| A1950 |  | Concrete | 3d | 2023-09-28 | 2023-09-30 | A1941 | 6d | 0d |
|  | 4 | **Abutment Wall** |  | 2023-10-01 | 2023-10-04 |  |  |  |
| A1960 |  | Reinforcement | 2d | 2023-10-01 | 2023-10-02 | A1950 | 6d | 0d |
| A1970 |  | Formwork and Concrete | 2d | 2023-10-03 | 2023-10-04 | A1960 | 6d | 0d |
|  | 3 | **Transom** |  | 2023-10-05 | 2023-10-12 |  |  |  |
| A1971 |  | Bottom Formwork | 3d | 2023-10-05 | 2023-10-07 | A1970 | 6d | 0d |
| A1980 |  | Reinforcement | 2d | 2023-10-08 | 2023-10-09 | A1971 | 6d | 0d |
| A1990 |  | Formwork and Concrete | 3d | 2023-10-10 | 2023-10-12 | A1980 | 6d | 0d |
|  | 2 | **Bearing Pads Seats** |  | 2023-10-13 | 2023-10-13 |  |  |  |
| A2000 |  | Formwork and Concrete | 1d | 2023-10-13 | 2023-10-13 | A1990 | 6d |  |
|  | 5 | **Bearing Pads** |  |  |  |  |  |  |
|  | 6 | **Back Wall** |  | 2023-10-29 | 2023-11-02 |  |  |  |
| A2010 |  | Reinforcement | 2d | 2023-10-29 | 2023-10-30 | A2080 | 26d | 0d |
| A2020 |  | Formwork and Concrete | 3d | 2023-10-31 | 2023-11-02 | A2010 | 26d |  |
|  | 7 | **Wing Wall** |  | 2023-10-13 | 2023-10-18 |  |  |  |
| A2030 |  | Pour 1 | 3d | 2023-10-13 | 2023-10-15 | A1990 | 35d | 0d |
| A2040 |  | Pour 2 | 3d | 2023-10-16 | 2023-10-18 | A2030 | 35d | 0d |
|  | 8 | **Approach Slab** |  | 2023-10-19 | 2023-10-24 |  |  |  |
| A2050 |  | Lean | 1d | 2023-10-19 | 2023-10-19 | A2040 | 35d | 0d |
| A2060 |  | Reinforcement | 3d | 2023-10-20 | 2023-10-22 | A2050 | 35d | 0d |
| A2070 |  | Formwork and Concrete | 2d | 2023-10-23 | 2023-10-24 | A2060 | 35d |  |

| ID | WBS | Activity | Duration | Start | Finish | Predecessors | Total float |
| --- | --- | --- | --- | --- | --- | --- | --- |
|  | 3 | **Girder Launching** |  | 2023-10-27 | 2023-10-28 |  |  |
| A2080 |  | Launching of Girder 7 to 12 | 2d | 2023-10-27 | 2023-10-28 | A1750 FS+7d, A2000 FS+7d, A2290 FS+28d | 0d |
|  | 7 | **Diaphragms** |  | 2023-10-29 | 2023-11-07 |  |  |
| A2300 |  | Reinforcement | 5d | 2023-10-29 | 2023-11-02 | A2080 | 0d |
| A2310 |  | Formwork and Concrete | 5d | 2023-11-03 | 2023-11-07 | A2300 | 0d |
|  | 4 | **Deck Slab** |  | 2023-11-08 | 2023-11-18 |  |  |
| A2139 |  | Bottom Formwork | 7d | 2023-11-08 | 2023-11-14 | A2310 | 0d |
| A2140 |  | Reinforcement | 2d | 2023-11-15 | 2023-11-16 | A2139 | 0d |
| A2150 |  | Formwork and Concrete | 2d | 2023-11-17 | 2023-11-18 | A2140 | 0d |
|  | 2 | **Girder Casting** |  | 2023-08-24 | 2023-09-28 |  |  |
|  | 1 | **Girder 1** |  | 2023-08-24 | 2023-08-26 |  |  |
| A2180 |  | Cast Girder 1 | 3d | 2023-08-24 | 2023-08-26 |  | 0d |
|  | 2 | **Girder 2** |  | 2023-08-27 | 2023-08-29 |  |  |
| A2190 |  | Cast Girder 2 | 3d | 2023-08-27 | 2023-08-29 | A2180 | 0d |
|  | 3 | **Girder 3** |  | 2023-08-30 | 2023-09-01 |  |  |
| A2200 |  | Cast Girder 3 | 3d | 2023-08-30 | 2023-09-01 | A2190 | 0d |
|  | 4 | **Girder 4** |  | 2023-09-02 | 2023-09-04 |  |  |
| A2210 |  | Cast Girder 4 | 3d | 2023-09-02 | 2023-09-04 | A2200 | 0d |
|  | 5 | **Girder 5** |  | 2023-09-05 | 2023-09-07 |  |  |
| A2220 |  | Cast Girder 5 | 3d | 2023-09-05 | 2023-09-07 | A2210 | 0d |
|  | 6 | **Girder 6** |  | 2023-09-08 | 2023-09-10 |  |  |
| A2230 |  | Cast Girder 6 | 3d | 2023-09-08 | 2023-09-10 | A2220 | 0d |
|  | 7 | **Girder 7** |  | 2023-09-11 | 2023-09-13 |  |  |
| A2240 |  | Cast Girder 7 | 3d | 2023-09-11 | 2023-09-13 | A2230 | 0d |

| ID | WBS | Activity | Duration | Start | Finish | Predecessors | Total float |
| --- | --- | --- | --- | --- | --- | --- | --- |
|  | 8 | **Girder 8** |  | 2023-09-14 | 2023-09-16 |  |  |
| A2250 |  | Cast Girder 8 | 3d | 2023-09-14 | 2023-09-16 | A2240 | 0d |
|  | 9 | **Girder 9** |  | 2023-09-17 | 2023-09-19 |  |  |
| A2260 |  | Cast Girder 9 | 3d | 2023-09-17 | 2023-09-19 | A2250 | 0d |
|  | 10 | **Girder 10** |  | 2023-09-20 | 2023-09-22 |  |  |
| A2270 |  | Cast Girder 10 | 3d | 2023-09-20 | 2023-09-22 | A2260 | 0d |
|  | 11 | **Girder 11** |  | 2023-09-23 | 2023-09-25 |  |  |
| A2280 |  | Cast Girder 11 | 3d | 2023-09-23 | 2023-09-25 | A2270 | 0d |
|  | 12 | **Girder 12** |  | 2023-09-26 | 2023-09-28 |  |  |
| A2290 |  | Cast Girder 12 | 3d | 2023-09-26 | 2023-09-28 | A2280 | 0d |
|  | 3 | **Sundaries** |  | 2023-11-19 | 2023-11-28 |  |  |
|  | 1 | **NJB** |  | 2023-11-19 | 2023-11-28 |  |  |
|  | 1 | **Left Carriageway** |  | 2023-11-19 | 2023-11-28 |  |  |
| A2320 |  | Reinforcement | 5d | 2023-11-19 | 2023-11-23 | A1570 | 0d |
| A2330 |  | Formwork and Concrete | 5d | 2023-11-24 | 2023-11-28 | A2320 | 0d |
|  | 2 | **Right Carriageway** |  | 2023-11-19 | 2023-11-28 |  |  |
| A2340 |  | Reinforcement | 5d | 2023-11-19 | 2023-11-23 | A2150 | 0d |
| A2350 |  | Formwork and Concrete | 5d | 2023-11-24 | 2023-11-28 | A2340 | 0d |
|  | 4 | **Expansion Joints** |  |  |  |  |  |
|  | 1 | **Left Carriageway-1** |  |  |  |  |  |
|  | 1 | **AB1 Expansion Joints** |  |  |  |  |  |
|  | 2 | **AB2 Expansion Joints** |  |  |  |  |  |
|  | 3 | **Right Carriageway** |  |  |  |  |  |
|  | 1 | **AB1 Expansion Joints** |  |  |  |  |  |
|  | 2 | **AB2 Expansion Joints** |  |  |  |  |  |
