# Torghar Bridge

Schedule from Primavera P6, 2023-01-23 to 2026-01-22, data date 2023-01-23, costs in PKR.

## Calendars

- Normal Calendar: Mon-Sun 08:00-16:00. Exceptions (off unless hours are given): 2023-04-22, 2023-04-24, 2023-06-29 to 2023-07-01, 2023-07-28 to 2023-07-29, 2023-08-14, 2023-12-25, 2024-04-10 to 2024-04-13, 2025-03-31 to 2025-04-02, 2025-06-06 to 2025-06-07, 2025-06-09.
- Pier IV & V 7 Months: Mon-Sun 08:00-16:00. Exceptions (off unless hours are given): 2023-04-22, 2023-04-24, 2023-06-01 to 2024-01-31, 2024-04-10 to 2024-04-13, 2024-06-01 to 2025-01-31, 2025-06-01 to 2026-01-22.
- Pier II, VI, LSS & RSS 9 Months: Mon-Sun 08:00-16:00. Exceptions (off unless hours are given): 2023-04-22, 2023-04-24, 2023-06-29 to 2023-11-30, 2023-12-25, 2024-04-10 to 2024-04-13, 2024-06-17 to 2024-06-19, 2024-08-01 to 2024-11-30, 2025-03-31 to 2025-04-02, 2025-06-06 to 2025-06-07, 2025-06-09, 2025-07-01 to 2025-11-30.
- Pier 1 10 Months: Mon-Sun 08:00-16:00. Exceptions (off unless hours are given): 2023-04-22, 2023-04-24, 2023-06-29 to 2023-07-01, 2023-07-28 to 2023-07-29, 2023-08-01 to 2023-09-30, 2023-12-25, 2024-04-10 to 2024-04-13, 2025-03-31 to 2025-04-02, 2025-06-06 to 2025-06-07, 2025-06-09.
- Normal Calendar: Mon-Sun 08:00-16:00. Exceptions (off unless hours are given): 2023-04-22, 2023-04-24, 2023-06-29 to 2023-07-01, 2023-07-28 to 2023-07-29, 2023-08-14, 2023-12-25, 2024-04-10 to 2024-04-13, 2025-03-31 to 2025-04-02, 2025-06-06 to 2025-06-07, 2025-06-09.
- Pier III & BGES 7 Months: Mon-Sun 08:00-16:00. Exceptions (off unless hours are given): 2023-04-22, 2023-04-24, 2023-06-01 to 2024-01-31, 2024-04-10 to 2024-04-13, 2024-06-01 to 2025-01-31, 2025-03-31 to 2025-04-02, 2025-06-01 to 2026-01-22.
- K-IV Project: Mon-Sat 08:00-16:00; Sun off. Exceptions (off unless hours are given): 2023-04-22, 2023-04-24, 2023-06-29 to 2023-07-01, 2023-07-28 to 2023-07-29, 2023-08-14, 2023-12-25.

## Resources

| Resource | Group | Unit | Rate |
| --- | --- | --- | --- |
| BOQ Cost | material | Rupee | 1 |
| Rotary Rig | equipment |  |  |
| Chain Excavator | equipment |  |  |
| Dumper | equipment |  |  |
| Concrete Labor | labor |  |  |
| Formwork Labor | labor |  |  |
| Steel Fixing Labor | labor |  |  |
| Bulldozer | equipment |  |  |
| Auger Drill Machines | equipment |  |  |
| Chinese Percussion Drill | equipment |  |  |
| Slip Shuttering | equipment |  |  |
| Tower Crane | equipment |  |  |
| Shuttering for Approach Span | equipment |  |  |
| Stressing Vendor | equipment |  |  |
| Gantry for Box Girder | equipment |  |  |
| General Equipment | equipment |  |  |
| Project Management Team | labor |  |  |

## Schedule

| ID | WBS | Activity | Type | Duration | Start | Finish | Predecessors | Total float | Free float | Calendar | Resources | Cost |
| --- | --- | --- | --- | --- | --- | --- | --- | --- | --- | --- | --- | --- |
|  | 16 | **Project Milestones** |  |  | 2023-01-23 | 2026-01-22 |  |  |  |  |  |  |
| A2750 |  | Notice to Commence | milestone | 0d | 2023-01-23 | 2023-01-23 |  | 0d |  |  |  |  |
| A2760 |  | Project Start | milestone | 0d | 2023-01-30 | 2023-01-30 | A2750 FS+7d | 0d |  |  |  |  |
| A2770 |  | Project Completion and Taking Over |  | 30d | 2025-12-24 | 2026-01-22 | A2740, A3000 FF, A2990 FF, A1970, A2040, A2940 | 0d |  |  |  |  |
|  | 17 | **Mobilization Left Bank** |  |  | 2023-01-30 | 2023-03-15 |  |  |  |  |  |  |
| A2950 |  | Establish Camp Left Bank |  | 45d | 2023-01-30 | 2023-03-15 | A2760 | 0d |  |  |  |  |
| A2960 |  | Erect Batching Plant Left Bank |  | 30d | 2023-02-14 | 2023-03-15 | A2950 SS+15d | 71d | 7d |  |  |  |
|  | 11 | **Mobilization Right Bank** |  |  | 2023-12-04 | 2024-02-02 |  |  |  |  |  |  |
| A2970 |  | Establish Camp Right Bank |  | 60d | 2023-12-04 | 2024-02-02 | A2760 FS+300d | 316d | 0d |  |  |  |
| A2980 |  | Erect Batching Plant Right Bank |  | 30d | 2023-12-19 | 2024-01-18 | A2970 SS+15d | 371d | 37d |  |  |  |
|  | 22 | **Procurement of Imported Items** |  |  | 2023-03-21 | 2025-11-29 |  |  |  |  |  |  |
| A3050 |  | Bearing Pads |  | 30d | 2023-03-21 | 2023-04-27 | A1131 SF | 852d |  | K-IV Project |  |  |
| A3070 |  | Coupler |  | 30d | 2024-06-11 | 2024-07-16 | A2080 SF | 477d |  | K-IV Project |  |  |
| A3060 |  | Expansion Joints |  | 30d | 2025-10-25 | 2025-11-29 | A2730 SF | 47d |  | K-IV Project |  |  |
|  | 21 | **General Administration & Misc. Items** |  |  | 2023-01-30 | 2025-12-23 |  |  |  |  |  |  |
| A3040 |  | General Administration & Misc. Items |  | 1040d | 2023-01-30 | 2025-12-23 | A2760 SS | 30d |  |  | BOQ Cost [40 Rupee]; General Equipment [7440 h]; Project Management Team [7440 h] | 1,008,864,736 |
|  | 1 | **Left Abutment** |  |  | 2023-01-30 | 2024-06-13 |  |  |  |  |  |  |
| A1000 |  | Confirmatory boring |  | 15d | 2023-01-30 | 2023-02-13 | A2760 | 744d | 30d |  | BOQ Cost [120 Rupee]; Rotary Rig [240 h] | 2,497,919 |
| A1010 |  | Excavation |  | 7d | 2023-03-16 | 2023-03-22 | A2950, A1000 | 714d | 0d |  | BOQ Cost [56 Rupee]; Chain Excavator [84 h]; Dumper [224 h] | 5,507,439 |
| A1020 |  | P.C.C. 1:4:8 |  | 3d | 2023-03-23 | 2023-03-25 | A1010, A2960 | 714d | 0d |  | BOQ Cost [24 Rupee]; Concrete Labor [64 h] | 1,198,222 |
| A1030 |  | Abutment Foundation |  | 15d | 2023-03-26 | 2023-04-09 | A1020 | 714d | 0d |  | BOQ Cost [120 Rupee]; Formwork Labor [272 h]; Steel Fixing Labor [880 h]; Concrete Labor [288 h] | 21,460,635 |
| A1040 |  | Front & Side Wall |  | 15d | 2023-04-10 | 2023-04-26 | A1030 | 714d | 0d |  | BOQ Cost [120 Rupee]; Concrete Labor [288 h]; Steel Fixing Labor [928 h]; Formwork Labor [1552 h] | 22,659,971 |
| A1080 |  | Retaining Wall Foundation |  | 7d | 2023-04-27 | 2023-05-03 | A1040 | 822d | 0d |  | BOQ Cost [56 Rupee]; Steel Fixing Labor [576 h]; Concrete Labor [224 h]; Formwork Labor [176 h] | 14,585,124 |
| A1131 |  | Install Bearings |  | 5d | 2023-04-27 | 2023-05-01 | A1040 | 714d | 0d |  | BOQ Cost [40 Rupee] | 19,994,508 |
| A1090 |  | Retaing Walls |  | 7d | 2023-05-04 | 2023-05-10 | A1080 | 822d | 0d |  | BOQ Cost [56 Rupee]; Steel Fixing Labor [496 h]; Concrete Labor [160 h]; Formwork Labor [1440 h] | 11,812,099 |
| A1110 |  | Back Fill Layer 1 |  | 7d | 2023-05-11 | 2023-05-17 | A1090 | 822d | 0d |  | BOQ Cost [56 Rupee] | 28,027 |
| A1111 |  | Tie Beams Level 1 |  | 7d | 2023-05-18 | 2023-05-24 | A1110 | 822d | 0d |  | BOQ Cost [56 Rupee]; Formwork Labor [64 h]; Concrete Labor [16 h]; Steel Fixing Labor [16 h] | 284,298 |
| A1112 |  | Stress Tie Beams Level 1 |  | 1d | 2023-05-25 | 2023-05-25 | A1111 | 822d | 0d |  | BOQ Cost [8 Rupee] | 247,464 |
| A1113 |  | Back Fill Layer 2 |  | 7d | 2023-05-26 | 2023-06-01 | A1112 | 822d | 0d |  | BOQ Cost [56 Rupee] | 28,027 |
| A1114 |  | Tie Beams Level 2 |  | 7d | 2023-06-02 | 2023-06-08 | A1113 | 822d | 0d |  | BOQ Cost [56 Rupee]; Formwork Labor [64 h]; Concrete Labor [16 h]; Steel Fixing Labor [16 h] | 284,298 |
| A1115 |  | Stress Tie Beams Level 2 |  | 1d | 2023-06-09 | 2023-06-09 | A1114 | 822d | 0d |  | BOQ Cost [8 Rupee] | 247,464 |
| A1116 |  | Back Fill Layer 3 |  | 7d | 2023-06-10 | 2023-06-16 | A1115 | 822d | 0d |  | BOQ Cost [56 Rupee] | 28,027 |
| A1117 |  | Tie Beams Level 3 |  | 7d | 2023-06-17 | 2023-06-23 | A1116 | 822d | 0d |  | BOQ Cost [56 Rupee]; Formwork Labor [64 h]; Concrete Labor [16 h]; Steel Fixing Labor [16 h] | 284,298 |
| A1118 |  | Stress Tie Beams Level 3 |  | 1d | 2023-06-24 | 2023-06-24 | A1117 | 822d | 330d |  | BOQ Cost [8 Rupee] | 247,464 |
| A1070 |  | Back Wall |  | 7d | 2024-05-24 | 2024-05-30 | A1960 | 492d | 0d |  | BOQ Cost [56 Rupee]; Steel Fixing Labor [224 h]; Concrete Labor [80 h]; Formwork Labor [896 h] | 5,549,344 |
| A1120 |  | Back Fill Layer 4 |  | 7d | 2024-05-31 | 2024-06-06 | A1070, A1118 | 492d | 0d |  | BOQ Cost [56 Rupee] | 28,027 |
| A1121 |  | Approach Slab |  | 7d | 2024-06-07 | 2024-06-13 | A1120 | 492d |  |  | BOQ Cost [56 Rupee]; Formwork Labor [32 h]; Concrete Labor [32 h]; Steel Fixing Labor [64 h] | 1,215,868 |

| ID | WBS | Activity | Duration | Start | Finish | Predecessors | Total float | Free float | Resources | Cost |
| --- | --- | --- | --- | --- | --- | --- | --- | --- | --- | --- |
|  | 2 | **Right Abutment** |  | 2024-02-03 | 2024-06-27 |  |  |  |  |  |
| A1130 |  | Confirmatory boring | 15d | 2024-02-03 | 2024-02-17 | A2970 | 423d | 0d | BOQ Cost [120 Rupee]; Rotary Rig [240 h] | 2,760,816 |
| A1140 |  | Excavation | 7d | 2024-02-18 | 2024-02-24 | A2970, A1130 | 423d | 0d | BOQ Cost [56 Rupee]; Chain Excavator [84 h]; Dumper [224 h] | 5,507,439 |
| A1150 |  | P.C.C. 1:4:8 | 3d | 2024-02-25 | 2024-02-27 | A1140, A2980 | 423d | 0d | BOQ Cost [24 Rupee]; Concrete Labor [64 h] | 1,198,222 |
| A1160 |  | Abutment Foundation | 15d | 2024-02-28 | 2024-03-13 | A1150 | 423d | 0d | BOQ Cost [120 Rupee]; Concrete Labor [288 h]; Formwork Labor [272 h]; Steel Fixing Labor [880 h] | 21,460,635 |
| A1170 |  | Front & Side Wall | 15d | 2024-03-14 | 2024-03-28 | A1160 | 423d | 0d | BOQ Cost [120 Rupee]; Concrete Labor [288 h]; Formwork Labor [1552 h]; Steel Fixing Labor [928 h] | 22,659,971 |
| A1180 |  | Retaining Wall Foundation-1 | 5d | 2024-03-29 | 2024-04-02 | A1170 | 478d | 0d | BOQ Cost [40 Rupee]; Concrete Labor [144 h]; Formwork Labor [112 h]; Steel Fixing Labor [224 h] | 6,852,092 |
| A1301 |  | Install Bearings | 5d | 2024-03-29 | 2024-04-02 | A1170 | 423d | 0d | BOQ Cost [40 Rupee] | 13,717,512 |
| A1190 |  | Retaing Walls-1 | 5d | 2024-04-03 | 2024-04-07 | A1180 | 478d | 0d | BOQ Cost [40 Rupee]; Concrete Labor [64 h]; Formwork Labor [608 h]; Steel Fixing Labor [176 h] | 4,311,246 |
| A1191 |  | Retaining Wall Foundation-2 | 5d | 2024-04-08 | 2024-04-16 | A1190 | 478d | 0d | BOQ Cost [40 Rupee]; Concrete Labor [64 h]; Formwork Labor [64 h]; Steel Fixing Labor [128 h] | 3,293,076 |
| A1192 |  | Retaing Walls-2 | 5d | 2024-04-17 | 2024-04-21 | A1191 | 478d | 0d | BOQ Cost [40 Rupee]; Concrete Labor [32 h]; Formwork Labor [416 h]; Steel Fixing Labor [112 h] | 2,438,207 |
| A1193 |  | Retaining Wall Foundation-3 | 5d | 2024-04-22 | 2024-04-26 | A1192 | 478d | 0d | BOQ Cost [40 Rupee]; Concrete Labor [48 h]; Formwork Labor [64 h]; Steel Fixing Labor [80 h] | 2,050,825 |
| A1194 |  | Retaing Walls-3 | 5d | 2024-04-27 | 2024-05-01 | A1193 | 478d | 0d | BOQ Cost [40 Rupee]; Steel Fixing Labor [64 h]; Formwork Labor [288 h]; Concrete Labor [32 h] | 1,565,313 |
| A1280 |  | Back Fill Layer 1 | 7d | 2024-05-02 | 2024-05-08 | A1194 | 478d | 0d | BOQ Cost [56 Rupee] | 28,027 |
| A1281 |  | Tie Beams Level 1 | 7d | 2024-05-09 | 2024-05-15 | A1280 | 478d | 0d | BOQ Cost [56 Rupee]; Concrete Labor [16 h]; Formwork Labor [64 h]; Steel Fixing Labor [16 h] | 284,298 |
| A1282 |  | Stress Tie Beams Level 1 | 1d | 2024-05-16 | 2024-05-16 | A1281 | 478d | 0d | BOQ Cost [8 Rupee] | 247,464 |
| A1283 |  | Back Fill Layer 2 | 7d | 2024-05-17 | 2024-05-23 | A1282 | 478d | 0d | BOQ Cost [56 Rupee] | 28,027 |
| A1284 |  | Tie Beams Level 2 | 7d | 2024-05-24 | 2024-05-30 | A1283 | 478d | 0d | BOQ Cost [56 Rupee]; Concrete Labor [16 h]; Formwork Labor [64 h]; Steel Fixing Labor [16 h] | 284,298 |
| A1200 |  | Back Wall | 7d | 2024-05-27 | 2024-06-02 | A2030 | 491d | 13d | BOQ Cost [56 Rupee] | 5,549,344 |
| A1285 |  | Stress Tie Beams Level 2 | 1d | 2024-05-31 | 2024-05-31 | A1284 | 478d | 0d | BOQ Cost [8 Rupee] | 247,464 |
| A1286 |  | Back Fill Layer 3 | 7d | 2024-06-01 | 2024-06-07 | A1285 | 478d | 0d | BOQ Cost [56 Rupee] | 28,027 |
| A1287 |  | Tie Beams Level 3 | 7d | 2024-06-08 | 2024-06-14 | A1286 | 478d | 0d | BOQ Cost [56 Rupee]; Concrete Labor [16 h]; Formwork Labor [64 h]; Steel Fixing Labor [16 h] | 284,298 |
| A1288 |  | Stress Tie Beams Level 3 | 1d | 2024-06-15 | 2024-06-15 | A1287 | 478d | 0d | BOQ Cost [8 Rupee] | 247,464 |
| A1290 |  | Back Fill Layer 4 | 5d | 2024-06-16 | 2024-06-20 | A1200, A1288 | 478d | 0d | BOQ Cost [40 Rupee] | 28,027 |
| A1291 |  | Approach Slab | 7d | 2024-06-21 | 2024-06-27 | A1290 | 478d |  | BOQ Cost [56 Rupee]; Concrete Labor [32 h]; Formwork Labor [32 h]; Steel Fixing Labor [64 h] | 1,215,868 |

| ID | WBS | Activity | Duration | Start | Finish | Predecessors | Total float | Free float | Calendar | Resources | Cost |
| --- | --- | --- | --- | --- | --- | --- | --- | --- | --- | --- | --- |
|  | 3 | **Pier I** |  | 2023-03-16 | 2023-10-20 |  |  |  |  |  |  |
| A1300 |  | Temporary Platform | 7d | 2023-03-16 | 2023-03-22 | A2950 | 0d |  | Pier 1 10 Months | BOQ Cost [56 Rupee]; Chain Excavator [84 h]; Dumper [224 h]; Bulldozer [56 h] | 108,900,000 |
| A1305 |  | Confirmatory Boring | 28d | 2023-03-23 | 2023-04-19 | A1300 | 548d | 0d | Pier 1 10 Months | BOQ Cost [224 Rupee]; Rotary Rig [448 h] | 5,283,157 |
| A1307 |  | Drilling Test Pile #1 | 2d | 2023-03-23 | 2023-03-24 | A1300 | 528d | 0d | Pier 1 10 Months | BOQ Cost [16 Rupee]; Auger Drill Machines [16 h] | 3,491,846 |
| A1308 |  | Concrete Test Pile #1 | 1d | 2023-03-25 | 2023-03-25 | A1307 | 528d | 0d | Pier 1 10 Months | BOQ Cost [8 Rupee]; Steel Fixing Labor [160 h]; Concrete Labor [48 h] | 4,172,276 |
| A1309 |  | Dynamic Load | 1d | 2023-04-09 | 2023-04-09 | A1308 FS+14d | 528d | 0d | Pier 1 10 Months | BOQ Cost [8 Rupee] | 7,986,163 |
| A1310 |  | Load Test Report | 1d | 2023-04-17 | 2023-04-17 | A1309 FS+7d | 528d | 0d | Pier 1 10 Months | BOQ Cost [8 Rupee] |  |
| A1311 |  | Issue Pier 1 Construction Drawings | 1d | 2023-04-25 | 2023-04-25 | A1310 FS+3d, A1305 FS+3d | 548d | 0d | Pier 1 10 Months | BOQ Cost [8 Rupee] |  |
| A1312 |  | Piles-24 Nos | 48d | 2023-04-26 | 2023-06-12 | A1300, A2960, A1311 | 548d | 0d | Pier 1 10 Months | BOQ Cost [384 Rupee]; Auger Drill Machines [384 h]; Chinese Percussion Drill [3072 h]; Steel Fixing Labor [7120 h]; Concrete Labor [1856 h] | 349,088,244 |
| A1320 |  | Excavation | 3d | 2023-06-13 | 2023-06-15 | A1312 | 548d | 0d | Pier 1 10 Months | BOQ Cost [24 Rupee]; Chain Excavator [36 h]; Dumper [96 h] | 5,507,439 |
| A1330 |  | Pile Cutting | 7d | 2023-06-16 | 2023-06-22 | A1320 | 548d | 0d | Pier 1 10 Months | BOQ Cost [56 Rupee]; Concrete Labor [480 h] |  |
| A1340 |  | P.C.C. 1:4:8 | 3d | 2023-06-23 | 2023-06-25 | A1330 | 548d | 0d | Pier 1 10 Months | BOQ Cost [24 Rupee]; Concrete Labor [160 h] | 3,084,240 |
| A1350 |  | Pile Cap | 40d | 2023-06-26 | 2023-10-09 | A1340 | 548d | 0d | Pier 1 10 Months | BOQ Cost [240 Rupee]; Concrete Labor [1712 h]; Steel Fixing Labor [6528 h] | 157,916,681 |
| A1370 |  | Set up Slip Form System | 7d | 2023-10-10 | 2023-10-16 | A1350 | 548d | 0d | Pier 1 10 Months | BOQ Cost [56 Rupee]; Slip Shuttering [168 h] |  |
| A1380 |  | Pier Shaft | 4d | 2023-10-17 | 2023-10-20 | A1370 | 548d | 109d | Pier 1 10 Months | BOQ Cost [32 Rupee] | 45,143,635 |
|  | 4 | **Pier II** |  | 2023-03-23 | 2024-02-07 |  |  |  |  |  |  |
| A1390 |  | Temporary Platform | 7d | 2023-03-23 | 2023-03-29 | A2950, A1300 | 0d |  | Pier II, VI, LSS & RSS 9 Months | BOQ Cost [56 Rupee]; Chain Excavator [84 h]; Dumper [224 h]; Bulldozer [56 h] | 217,800,000 |
| A1395 |  | Confirmatory Boring | 5d | 2023-03-30 | 2023-04-03 | A1390 | 328d | 14d | Pier II, VI, LSS & RSS 9 Months | BOQ Cost [40 Rupee]; Rotary Rig [80 h] | 5,283,157 |
| A1396 |  | Issue Pier 2 Construction Drawings | 5d | 2023-04-21 | 2023-04-27 | A1395 FS+3d, A1310 FS+3d | 314d | 0d | Pier II, VI, LSS & RSS 9 Months | BOQ Cost [40 Rupee] |  |
| A1400 |  | Piles-24 Nos | 48d | 2023-04-28 | 2023-06-14 | A1390, A2960, A1396 | 314d | 0d | Pier II, VI, LSS & RSS 9 Months | BOQ Cost [384 Rupee]; Auger Drill Machines [384 h]; Chinese Percussion Drill [3072 h]; Concrete Labor [1328 h]; Steel Fixing Labor [5088 h] | 246,271,201 |
| A1410 |  | Excavation | 3d | 2023-06-15 | 2023-06-17 | A1400 | 314d | 0d | Pier II, VI, LSS & RSS 9 Months | BOQ Cost [24 Rupee]; Chain Excavator [36 h]; Dumper [96 h] | 5,507,439 |
| A1420 |  | Pile Cutting | 7d | 2023-06-18 | 2023-06-24 | A1410 | 314d | 0d | Pier II, VI, LSS & RSS 9 Months | BOQ Cost [56 Rupee]; Concrete Labor [480 h] |  |
| A1430 |  | P.C.C. 1:4:8 | 3d | 2023-06-25 | 2023-06-27 | A1420 | 314d | 0d | Pier II, VI, LSS & RSS 9 Months | BOQ Cost [24 Rupee]; Concrete Labor [160 h] | 3,084,240 |
| A1440 |  | Pile Cap | 30d | 2023-12-05 | 2024-01-04 | A1430 FS+5d | 314d | 0d | Pier II, VI, LSS & RSS 9 Months | BOQ Cost [240 Rupee]; Concrete Labor [1712 h]; Steel Fixing Labor [6528 h] | 157,916,681 |
| A1460 |  | Set up Slip Form System | 7d | 2024-01-05 | 2024-01-11 | A1440 | 314d | 0d | Pier II, VI, LSS & RSS 9 Months | BOQ Cost [56 Rupee]; Slip Shuttering [168 h] |  |
| A1470 |  | Pier Shaft | 7d | 2024-01-12 | 2024-01-18 | A1460 | 314d | 0d | Pier II, VI, LSS & RSS 9 Months | BOQ Cost [56 Rupee] | 87,959,050 |
| A1480 |  | Transom | 15d | 2024-01-19 | 2024-02-02 | A1470 | 439d | 0d |  | BOQ Cost [120 Rupee]; Concrete Labor [48 h]; Steel Fixing Labor [180 h]; Formwork Labor [336 h] | 3,684,957 |
| A1560 |  | Install Bearings | 5d | 2024-02-03 | 2024-02-07 | A1480 | 439d | 0d |  | BOQ Cost [40 Rupee] | 47,407,285 |

| ID | WBS | Activity | Duration | Start | Finish | Predecessors | Total float | Free float | Calendar | Resources | Cost |
| --- | --- | --- | --- | --- | --- | --- | --- | --- | --- | --- | --- |
|  | 5 | **Pier III** |  | 2023-03-30 | 2024-06-20 |  |  |  |  |  |  |
| A1490 |  | Temporary Access & Platform | 15d | 2023-03-30 | 2023-04-13 | A2950, A1390 | 0d |  | Pier III & BGES 7 Months | BOQ Cost [120 Rupee]; Chain Excavator [180 h]; Dumper [480 h]; Bulldozer [120 h] | 217,800,000 |
| A1491 |  | Confirmatory Boring | 28d | 2023-04-14 | 2023-05-13 | A1490 | 10d | 0d | Pier III & BGES 7 Months | BOQ Cost [224 Rupee]; Rotary Rig [448 h] | 5,283,157 |
| A1492 |  | Drill Test Pile-2 | 2d | 2023-04-14 | 2023-04-15 | A1490 | 12d | 0d | Pier III & BGES 7 Months | BOQ Cost [16 Rupee]; Auger Drill Machines [16 h] | 3,491,846 |
| A1493 |  | Concrete Test Pile-2 | 1d | 2023-04-16 | 2023-04-16 | A1492 | 12d | 0d | Pier III & BGES 7 Months | BOQ Cost [8 Rupee]; Steel Fixing Labor [160 h]; Concrete Labor [48 h] | 4,172,276 |
| A1494 |  | Dynamic Load | 1d | 2023-05-03 | 2023-05-03 | A1493 FS+14d | 12d | 0d | Pier III & BGES 7 Months | BOQ Cost [8 Rupee] | 7,986,163 |
| A1495 |  | Load Test Report | 1d | 2023-05-11 | 2023-05-11 | A1494 FS+7d | 12d | 2d |  | BOQ Cost [8 Rupee] |  |
| A1496 |  | Issue Pier 3 Construction Drawings | 1d | 2023-05-17 | 2023-05-17 | A1495 FS+3d, A1491 FS+3d | 10d | 0d |  | BOQ Cost [8 Rupee] | 8 |
| A1500 |  | Piles-40 Nos | 60d | 2023-05-18 | 2024-03-17 | A1490, A2960, A1496 | 10d | 0d | Pier III & BGES 7 Months | BOQ Cost [480 Rupee]; Auger Drill Machines [480 h]; Chinese Percussion Drill [3840 h]; Steel Fixing Labor [5088 h]; Concrete Labor [1328 h] | 236,914,404 |
| A1520 |  | Excavation | 7d | 2024-03-18 | 2024-03-24 | A1500 | 10d | 0d | Pier III & BGES 7 Months | BOQ Cost [56 Rupee]; Chain Excavator [84 h]; Dumper [224 h] | 13,482,211 |
| A1530 |  | Pile Cutting | 7d | 2024-03-25 | 2024-03-31 | A1520 | 10d | 0d | Pier III & BGES 7 Months | BOQ Cost [56 Rupee]; Concrete Labor [800 h] |  |
| A1540 |  | P.C.C. 1:4:8 | 3d | 2024-04-01 | 2024-04-03 | A1530 | 10d | 0d | Pier III & BGES 7 Months | BOQ Cost [24 Rupee]; Concrete Labor [336 h] | 6,667,295 |
| A1550 |  | Pile Cap | 30d | 2024-04-04 | 2024-05-07 | A1540 | 10d | 0d | Pier III & BGES 7 Months | BOQ Cost [240 Rupee]; Steel Fixing Labor [18240 h]; Concrete Labor [4752 h] | 441,164,061 |
| A1570 |  | Set up Slip Form System | 7d | 2024-05-08 | 2024-05-14 | A1550 | 10d | 0d | Pier III & BGES 7 Months | BOQ Cost [56 Rupee]; Slip Shuttering [168 h] |  |
| A1580 |  | Pier Shaft | 7d | 2024-05-15 | 2024-05-21 | A1570 | 10d | 0d | Pier III & BGES 7 Months | BOQ Cost [56 Rupee] | 140,529,280 |
| A1590 |  | Pier Head | 30d | 2024-05-22 | 2024-06-20 | A1580 | 10d | 0d |  | BOQ Cost [240 Rupee]; Tower Crane [240 h]; Steel Fixing Labor [4440 h]; Concrete Labor [1176 h]; Formwork Labor [3648 h] | 77,772,085 |
|  | 6 | **Pier IV** |  | 2023-04-14 | 2024-06-30 |  |  |  |  |  |  |
| A1600 |  | Temporary Works | 15d | 2023-04-14 | 2023-04-30 | A2950, A1490 | 0d |  | Pier IV & V 7 Months | BOQ Cost [120 Rupee]; Chain Excavator [180 h]; Dumper [480 h]; Bulldozer [120 h] | 217,800,000 |
| A1601 |  | Confirmatory Boring | 28d | 2023-05-01 | 2023-05-28 | A1600 | 0d |  | Pier IV & V 7 Months | BOQ Cost [224 Rupee]; Rotary Rig [448 h] | 5,283,157 |
| A1602 |  | Drill Test Pile-3 | 2d | 2023-05-01 | 2023-05-02 | A1600 | 6d | 0d | Pier IV & V 7 Months | BOQ Cost [16 Rupee]; Auger Drill Machines [16 h] | 3,491,846 |
| A1603 |  | Concrete Test Pile-3 | 1d | 2023-05-03 | 2023-05-03 | A1602 | 6d | 0d | Pier IV & V 7 Months | BOQ Cost [8 Rupee]; Steel Fixing Labor [160 h]; Concrete Labor [48 h] | 4,172,276 |
| A1604 |  | Dynamic Load | 1d | 2023-05-18 | 2023-05-18 | A1603 FS+14d | 6d | 0d | Pier IV & V 7 Months | BOQ Cost [8 Rupee] | 7,986,163 |
| A1605 |  | Load Test Report | 1d | 2023-05-26 | 2023-05-26 | A1604 FS+7d | 239d | 2d |  | BOQ Cost [8 Rupee] |  |
| A1606 |  | Issue Pier 4 Construction Drawings | 1d | 2023-06-01 | 2023-06-01 | A1605 FS+3d, A1601 FS+3d | 237d |  |  | BOQ Cost [8 Rupee] | 8 |
| A1610 |  | Piles-28 Nos | 56d | 2024-02-01 | 2024-03-27 | A1600, A2960, A1606 | 0d |  | Pier IV & V 7 Months | BOQ Cost [448 Rupee]; Auger Drill Machines [448 h]; Chinese Percussion Drill [3584 h]; Steel Fixing Labor [2192 h]; Concrete Labor [576 h] | 98,159,405 |
| A1630 |  | Excavation | 7d | 2024-03-28 | 2024-04-03 | A1610 | 0d |  | Pier IV & V 7 Months | BOQ Cost [56 Rupee]; Chain Excavator [84 h]; Dumper [224 h] | 9,516,855 |
| A1640 |  | Pile Cutting | 7d | 2024-04-04 | 2024-04-14 | A1630 | 0d |  | Pier IV & V 7 Months | BOQ Cost [56 Rupee]; Concrete Labor [560 h] |  |
| A1650 |  | P.C.C. 1:4:8 | 3d | 2024-04-15 | 2024-04-17 | A1640 | 0d |  | Pier IV & V 7 Months | BOQ Cost [24 Rupee]; Concrete Labor [224 h] | 4,593,486 |
| A1660 |  | Pile Cap | 30d | 2024-04-18 | 2024-05-17 | A1650 | 0d |  | Pier IV & V 7 Months | BOQ Cost [240 Rupee]; Steel Fixing Labor [12544 h]; Concrete Labor [3280 h] | 303,300,292 |
| A1680 |  | Set up Slip Form System | 7d | 2024-05-18 | 2024-05-24 | A1660 | 0d |  | Pier IV & V 7 Months | BOQ Cost [56 Rupee]; Slip Shuttering [168 h] |  |
| A1690 |  | Pier Shaft | 7d | 2024-05-25 | 2024-05-31 | A1680 | 0d |  | Pier IV & V 7 Months | BOQ Cost [56 Rupee] | 140,529,280 |
| A1700 |  | Pier Head | 30d | 2024-06-01 | 2024-06-30 | A1690 | 0d |  |  | BOQ Cost [240 Rupee]; Tower Crane [240 h]; Steel Fixing Labor [4440 h]; Concrete Labor [1176 h]; Formwork Labor [3648 h] | 77,772,085 |

| ID | WBS | Activity | Duration | Start | Finish | Predecessors | Total float | Free float | Calendar | Resources | Cost |
| --- | --- | --- | --- | --- | --- | --- | --- | --- | --- | --- | --- |
|  | 7 | **Pier V** |  | 2023-05-01 | 2024-06-30 |  |  |  |  |  |  |
| A1710 |  | Temporary Works | 7d | 2023-05-01 | 2023-05-07 | A2950, A1600 | 0d |  | Pier IV & V 7 Months | BOQ Cost [56 Rupee]; Chain Excavator [84 h]; Dumper [224 h]; Bulldozer [56 h] | 217,800,000 |
| A1711 |  | Confirmatory Boring | 20d | 2023-05-08 | 2023-05-27 | A1710 | 6d |  | Pier IV & V 7 Months | BOQ Cost [224 Rupee]; Rotary Rig [448 h] | 5,283,157 |
| A1712 |  | Drill Test Pile-4 | 2d | 2023-05-08 | 2023-05-09 | A1710 | 0d |  | Pier IV & V 7 Months | BOQ Cost [16 Rupee]; Auger Drill Machines [16 h] | 3,491,846 |
| A1713 |  | Concrete Test Pile-4 | 1d | 2023-05-10 | 2023-05-10 | A1712 | 0d |  | Pier IV & V 7 Months | BOQ Cost [8 Rupee]; Steel Fixing Labor [160 h]; Concrete Labor [48 h] | 4,172,276 |
| A1714 |  | Dynamic Load | 1d | 2023-05-25 | 2023-05-25 | A1713 FS+14d | 0d |  | Pier IV & V 7 Months | BOQ Cost [8 Rupee] | 7,986,163 |
| A1715 |  | Load Test Report | 1d | 2024-02-02 | 2024-02-02 | A1714 FS+7d | 0d |  |  | BOQ Cost [8 Rupee] |  |
| A1716 |  | Issue Pier 5 Construction Drawings | 1d | 2024-02-06 | 2024-02-06 | A1715 FS+3d, A1711 FS+3d | 0d |  |  | BOQ Cost [8 Rupee] |  |
| A1720 |  | Piles-40 Nos | 50d | 2024-02-07 | 2024-03-27 | A1710, A2960, A1716 | 0d |  | Pier IV & V 7 Months | BOQ Cost [320 Rupee]; Auger Drill Machines [320 h]; Chinese Percussion Drill [2560 h]; Steel Fixing Labor [3136 h]; Concrete Labor [816 h] | 140,227,721 |
| A1740 |  | Excavation | 7d | 2024-03-28 | 2024-04-03 | A1720 | 0d |  | Pier IV & V 7 Months | BOQ Cost [56 Rupee]; Chain Excavator [84 h]; Dumper [224 h] | 13,482,212 |
| A1750 |  | Pile Cutting | 7d | 2024-04-04 | 2024-04-14 | A1740 | 0d |  | Pier IV & V 7 Months | BOQ Cost [56 Rupee]; Concrete Labor [800 h] |  |
| A1760 |  | P.C.C. 1:4:8 | 3d | 2024-04-15 | 2024-04-17 | A1750 | 0d |  | Pier IV & V 7 Months | BOQ Cost [24 Rupee]; Concrete Labor [336 h] | 6,667,296 |
| A1770 |  | Pile Cap | 30d | 2024-04-18 | 2024-05-17 | A1760 | 0d |  | Pier IV & V 7 Months | BOQ Cost [240 Rupee]; Steel Fixing Labor [18240 h]; Concrete Labor [4752 h] | 441,164,061 |
| A1790 |  | Set up Slip Form System | 7d | 2024-05-18 | 2024-05-24 | A1770 | 0d |  | Pier IV & V 7 Months | BOQ Cost [56 Rupee]; Slip Shuttering [168 h] |  |
| A1800 |  | Pier Shaft | 7d | 2024-05-25 | 2024-05-31 | A1790 | 0d |  | Pier IV & V 7 Months | BOQ Cost [56 Rupee] | 140,529,280 |
| A1810 |  | Pier Head | 30d | 2024-06-01 | 2024-06-30 | A1800 | 0d |  |  | BOQ Cost [240 Rupee]; Tower Crane [240 h]; Steel Fixing Labor [4440 h]; Concrete Labor [1176 h]; Formwork Labor [3648 h] | 77,772,085 |
|  | 8 | **Pier VI** |  | 2024-02-03 | 2024-08-05 |  |  |  |  |  |  |
| A1820 |  | Temporary Works | 7d | 2024-02-03 | 2024-02-09 | A2970 | 191d | 0d | Pier II, VI, LSS & RSS 9 Months | BOQ Cost [56 Rupee]; Chain Excavator [84 h]; Dumper [224 h]; Bulldozer [56 h] | 108,900,000 |
| A1821 |  | Confirmatory Boring | 28d | 2024-02-10 | 2024-03-08 | A1820 | 191d | 0d | Pier II, VI, LSS & RSS 9 Months | BOQ Cost [224 Rupee]; Rotary Rig [448 h] | 5,283,157 |
| A1822 |  | Issue PIer 6 Construction Drawings | 5d | 2024-03-09 | 2024-03-13 | A1821 | 191d | 0d | Pier II, VI, LSS & RSS 9 Months | BOQ Cost [40 Rupee] |  |
| A1830 |  | Piles-24 Nos | 48d | 2024-03-14 | 2024-05-04 | A2980, A1822, A1820 | 191d | 0d | Pier II, VI, LSS & RSS 9 Months | BOQ Cost [384 Rupee]; Auger Drill Machines [384 h]; Chinese Percussion Drill [3072 h]; Steel Fixing Labor [1888 h]; Concrete Labor [496 h] | 84,136,632 |
| A1840 |  | Excavation | 7d | 2024-05-05 | 2024-05-11 | A1830 | 191d | 0d | Pier II, VI, LSS & RSS 9 Months | BOQ Cost [56 Rupee]; Chain Excavator [84 h]; Dumper [224 h] | 5,507,439 |
| A1850 |  | Pile Cutting | 7d | 2024-05-12 | 2024-05-18 | A1840 | 191d | 0d | Pier II, VI, LSS & RSS 9 Months | BOQ Cost [56 Rupee]; Concrete Labor [480 h] |  |
| A1860 |  | P.C.C. 1:4:8 | 3d | 2024-05-19 | 2024-05-21 | A1850 | 191d | 0d | Pier II, VI, LSS & RSS 9 Months | BOQ Cost [24 Rupee]; Concrete Labor [160 h] | 3,084,241 |
| A1870 |  | Pile Cap | 40d | 2024-05-22 | 2024-07-03 | A1860 | 191d | 0d | Pier II, VI, LSS & RSS 9 Months | BOQ Cost [240 Rupee]; Steel Fixing Labor [6560 h]; Concrete Labor [1712 h] | 157,916,681 |
| A1890 |  | Set up Slip Form System | 7d | 2024-07-04 | 2024-07-10 | A1870 | 191d | 0d | Pier II, VI, LSS & RSS 9 Months | BOQ Cost [56 Rupee]; Slip Shuttering [168 h] |  |
| A1900 |  | Pier Shaft | 6d | 2024-07-11 | 2024-07-16 | A1890 | 191d | 0d | Pier II, VI, LSS & RSS 9 Months | BOQ Cost [48 Rupee] | 79,769,486 |
| A3020 |  | Transom | 15d | 2024-07-17 | 2024-07-31 | A1900 | 313d | 0d |  | BOQ Cost [120 Rupee]; Steel Fixing Labor [180 h]; Concrete Labor [48 h]; Formwork Labor [336 h] | 3,684,957 |
| A3030 |  | Install Bearings | 5d | 2024-08-01 | 2024-08-05 | A3020 | 313d | 0d |  | BOQ Cost [40 Rupee] | 47,407,285 |

| ID | WBS | Activity | Duration | Start | Finish | Predecessors | Total float | Free float | Calendar | Resources | Cost |
| --- | --- | --- | --- | --- | --- | --- | --- | --- | --- | --- | --- |
|  | 9 | **Left Bank Side Span Super-Structure** |  | 2024-02-08 | 2024-06-07 |  |  |  |  |  |  |
| A1910 |  | Falsework | 60d | 2024-02-08 | 2024-04-07 | A1380, A1560, A1131 | 314d | 0d | Pier II, VI, LSS & RSS 9 Months | BOQ Cost [480 Rupee]; Shuttering for Approach Span [480 h]; Formwork Labor [3200 h] |  |
| A1920 |  | Bottom Slab | 10d | 2024-04-08 | 2024-04-21 | A1910 | 492d | 0d |  | BOQ Cost [80 Rupee]; Shuttering for Approach Span [80 h]; Steel Fixing Labor [1600 h]; Concrete Labor [512 h]; Formwork Labor [3600 h] | 43,007,272 |
| A1930 |  | Webs & Diaphragms | 7d | 2024-04-22 | 2024-04-28 | A1920 | 492d | 0d |  | BOQ Cost [56 Rupee]; Shuttering for Approach Span [56 h]; Steel Fixing Labor [1360 h]; Concrete Labor [432 h]; Formwork Labor [3808 h] | 36,462,603 |
| A1950 |  | Top Slab | 15d | 2024-04-29 | 2024-05-13 | A1930 | 492d | 0d |  | BOQ Cost [120 Rupee]; Shuttering for Approach Span [120 h]; Steel Fixing Labor [2784 h]; Concrete Labor [880 h]; Formwork Labor [4208 h] | 74,767,739 |
| A1960 |  | Stressing | 3d | 2024-05-21 | 2024-05-23 | A1950 FS+7d | 492d | 0d |  | BOQ Cost [24 Rupee]; Shuttering for Approach Span [24 h]; Stressing Vendor [24 h] | 39,401,461 |
| A1970 |  | Removal of Falsework | 15d | 2024-05-24 | 2024-06-07 | A1960 | 558d |  |  | BOQ Cost [120 Rupee]; Shuttering for Approach Span [120 h] |  |
|  | 10 | **Right Bank Side Span Super-Structure** |  | 2024-04-03 | 2024-06-10 |  |  |  |  |  |  |
| A1980 |  | Falsework | 21d | 2024-04-03 | 2024-04-27 | A1301 | 298d | 0d | Pier II, VI, LSS & RSS 9 Months | BOQ Cost [168 Rupee]; Shuttering for Approach Span [168 h]; Formwork Labor [1600 h] |  |
| A1990 |  | Bottom Slab | 7d | 2024-04-28 | 2024-05-04 | A1980 | 491d | 0d |  | BOQ Cost [56 Rupee]; Shuttering for Approach Span [56 h]; Steel Fixing Labor [480 h]; Concrete Labor [160 h]; Formwork Labor [1200 h] | 12,938,374 |
| A2000 |  | Webs & Diaphragms | 5d | 2024-05-05 | 2024-05-09 | A1990 | 491d | 0d |  | BOQ Cost [40 Rupee]; Shuttering for Approach Span [40 h]; Steel Fixing Labor [512 h]; Concrete Labor [176 h]; Formwork Labor [1408 h] | 13,886,737 |
| A2020 |  | Top Slab | 7d | 2024-05-10 | 2024-05-16 | A2000 | 491d | 0d |  | BOQ Cost [56 Rupee]; Shuttering for Approach Span [56 h]; Steel Fixing Labor [800 h]; Concrete Labor [256 h]; Formwork Labor [1408 h] | 21,576,215 |
| A2030 |  | Stressing | 3d | 2024-05-24 | 2024-05-26 | A2020 FS+7d | 491d | 0d |  | BOQ Cost [24 Rupee]; Shuttering for Approach Span [24 h]; Stressing Vendor [24 h] | 14,425,253 |
| A2040 |  | Removal of Falsework | 15d | 2024-05-27 | 2024-06-10 | A2030 | 555d |  |  | BOQ Cost [120 Rupee]; Shuttering for Approach Span [120 h] |  |
|  | 12 | **Box Girder Pier-03** |  | 2024-06-21 | 2025-08-25 |  |  |  |  |  |  |
| A2070 |  | Erection of Gantries | 25d | 2024-06-21 | 2024-07-15 | A1590 | 10d | 0d |  | BOQ Cost [200 Rupee]; Stressing Vendor [200 h]; Gantry for Box Girder [200 h]; Tower Crane [200 h] |  |
| A2080 |  | Cast & Stress Seg-021 & Seg-25 | 20d | 2024-07-16 | 2024-08-04 | A2070 | 10d | 0d |  | BOQ Cost [160 Rupee]; Gantry for Box Girder [320 h]; Tower Crane [160 h]; Stressing Vendor [160 h] | 26,633,523 |
| A2090 |  | Cast & Stress Seg-020 & Seg-26 | 20d | 2024-08-05 | 2024-08-24 | A2080 | 10d | 0d |  | BOQ Cost [160 Rupee]; Gantry for Box Girder [320 h]; Tower Crane [160 h]; Stressing Vendor [160 h] | 28,498,057 |
| A2100 |  | Cast & Stress Seg-019 & Seg-27 | 20d | 2024-08-25 | 2024-09-13 | A2090 | 10d | 0d |  | BOQ Cost [120 Rupee]; Gantry for Box Girder [240 h]; Tower Crane [120 h]; Stressing Vendor [120 h] | 31,196,420 |
| A2110 |  | Cast & Stress Seg-018 & Seg-28 | 20d | 2024-09-14 | 2024-10-03 | A2100 | 10d | 0d |  | BOQ Cost [120 Rupee]; Gantry for Box Girder [240 h]; Tower Crane [120 h]; Stressing Vendor [120 h] | 31,081,908 |
| A2120 |  | Cast & Stress Seg-017 & Seg-29 | 20d | 2024-10-04 | 2024-10-23 | A2110 | 10d | 0d |  | BOQ Cost [80 Rupee]; Gantry for Box Girder [160 h]; Tower Crane [80 h]; Stressing Vendor [80 h] | 52,933,992 |
| A2130 |  | Cast & Stress Seg-016 & Seg-30 | 20d | 2024-10-24 | 2024-11-12 | A2120 | 10d | 0d |  | BOQ Cost [80 Rupee]; Gantry for Box Girder [160 h]; Tower Crane [80 h]; Stressing Vendor [80 h] | 53,875,810 |
| A2140 |  | Cast & Stress Seg-015 & Seg-31 | 20d | 2024-11-13 | 2024-12-02 | A2130 | 10d | 0d |  | BOQ Cost [80 Rupee]; Gantry for Box Girder [160 h]; Tower Crane [80 h]; Stressing Vendor [80 h] | 57,490,571 |
| A2150 |  | Cast & Stress Seg-014 & Seg-32 | 20d | 2024-12-03 | 2024-12-22 | A2140 | 10d | 0d |  | BOQ Cost [80 Rupee]; Gantry for Box Girder [160 h]; Tower Crane [80 h]; Stressing Vendor [80 h] | 58,587,227 |
| A2160 |  | Cast & Stress Seg-013 & Seg-33 | 20d | 2024-12-23 | 2025-01-11 | A2150 | 10d | 0d |  | BOQ Cost [80 Rupee]; Gantry for Box Girder [160 h]; Tower Crane [80 h]; Stressing Vendor [80 h] | 59,760,205 |
| A2170 |  | Cast & Stress Seg-012 & Seg-34 | 20d | 2025-01-12 | 2025-01-31 | A2160 | 10d | 0d |  | BOQ Cost [80 Rupee]; Gantry for Box Girder [160 h]; Tower Crane [80 h]; Stressing Vendor [80 h] | 61,007,825 |
| A2180 |  | Cast & Stress Seg-011 & Seg-35 | 20d | 2025-02-01 | 2025-02-20 | A2170 | 10d | 0d |  | BOQ Cost [80 Rupee]; Gantry for Box Girder [160 h]; Tower Crane [80 h]; Stressing Vendor [80 h] | 36,326,697 |
| A2190 |  | Cast & Stress Seg-010 & Seg-36 | 20d | 2025-02-21 | 2025-03-12 | A2180 | 10d | 0d |  | BOQ Cost [80 Rupee]; Gantry for Box Girder [160 h]; Tower Crane [80 h]; Stressing Vendor [80 h] | 36,637,023 |
| A2200 |  | Cast & Stress Seg-009 & Seg-37 | 20d | 2025-03-13 | 2025-04-04 | A2190 | 10d | 0d |  | BOQ Cost [80 Rupee]; Gantry for Box Girder [160 h]; Tower Crane [80 h]; Stressing Vendor [80 h] | 37,034,069 |
| A2210 |  | Cast & Stress Seg-008 & Seg-38 | 20d | 2025-04-05 | 2025-04-24 | A2200 | 10d | 0d |  | BOQ Cost [80 Rupee]; Gantry for Box Girder [160 h]; Tower Crane [80 h]; Stressing Vendor [80 h] | 37,528,978 |
| A2220 |  | Cast & Stress Seg-007 & Seg-39 | 20d | 2025-04-25 | 2025-05-14 | A2210 | 10d | 0d |  | BOQ Cost [80 Rupee]; Gantry for Box Girder [160 h]; Tower Crane [80 h]; Stressing Vendor [80 h] | 32,296,145 |
| A2230 |  | Cast & Stress Seg-006 & Seg-40 | 20d | 2025-05-15 | 2025-06-03 | A2220 | 10d | 0d |  | BOQ Cost; Gantry for Box Girder; Tower Crane; Stressing Vendor | 33,905,022 |
| A2240 |  | Cast & Stress Seg-005 & Seg-41 | 20d | 2025-06-04 | 2025-06-26 | A2230 | 10d | 0d |  | BOQ Cost [80 Rupee]; Gantry for Box Girder [160 h]; Tower Crane [80 h]; Stressing Vendor [80 h] | 33,607,955 |
| A2250 |  | Cast & Stress Seg-004 & Seg-42 | 20d | 2025-06-27 | 2025-07-16 | A2240 | 10d | 0d |  | BOQ Cost [80 Rupee]; Gantry for Box Girder [160 h]; Tower Crane [80 h]; Stressing Vendor [80 h] | 33,383,350 |
| A2260 |  | Cast & Stress Seg-003 & Seg-43 | 20d | 2025-07-17 | 2025-08-05 | A2250 | 10d | 0d |  | BOQ Cost [80 Rupee]; Gantry for Box Girder [160 h]; Tower Crane [80 h]; Stressing Vendor [80 h] | 33,151,206 |
| A2270 |  | Cast & Stress Seg-002 & Seg-44 | 20d | 2025-08-06 | 2025-08-25 | A2260 | 10d |  |  | BOQ Cost [80 Rupee]; Gantry for Box Girder [160 h]; Tower Crane [80 h]; Stressing Vendor [80 h] | 26,225,304 |

| ID | WBS | Activity | Duration | Start | Finish | Predecessors | Total float | Resources | Cost |
| --- | --- | --- | --- | --- | --- | --- | --- | --- | --- |
|  | 13 | **Box Girder Pier-04** |  | 2024-07-01 | 2025-09-04 |  |  |  |  |
| A2280 |  | Erection of Gantries | 25d | 2024-07-01 | 2024-07-25 | A1700 | 0d | BOQ Cost [200 Rupee]; Gantry for Box Girder [200 h]; Stressing Vendor [200 h]; Tower Crane [200 h] |  |
| A2290 |  | Cast & Stress Seg-065 & Seg-069 | 20d | 2024-07-26 | 2024-08-14 | A2280, A2080 SS-15d | 0d | BOQ Cost [160 Rupee]; Gantry for Box Girder [320 h]; Tower Crane [160 h]; Stressing Vendor [160 h] | 26,633,523 |
| A2300 |  | Cast & Stress Seg-064 & Seg-070 | 20d | 2024-08-15 | 2024-09-03 | A2290 | 0d | BOQ Cost [160 Rupee]; Gantry for Box Girder [320 h]; Tower Crane [160 h]; Stressing Vendor [160 h] | 28,498,057 |
| A2310 |  | Cast & Stress Seg-063 & Seg-071 | 20d | 2024-09-04 | 2024-09-23 | A2300 | 0d | BOQ Cost [120 Rupee]; Gantry for Box Girder [240 h]; Tower Crane [120 h]; Stressing Vendor [120 h] | 31,196,420 |
| A2320 |  | Cast & Stress Seg-062 & Seg-072 | 20d | 2024-09-24 | 2024-10-13 | A2310 | 0d | BOQ Cost [120 Rupee]; Gantry for Box Girder [240 h]; Tower Crane [120 h]; Stressing Vendor [120 h] | 31,081,908 |
| A2330 |  | Cast & Stress Seg-061 & Seg-073 | 20d | 2024-10-14 | 2024-11-02 | A2320 | 0d | BOQ Cost [80 Rupee]; Gantry for Box Girder [160 h]; Tower Crane [80 h]; Stressing Vendor [80 h] | 52,933,992 |
| A2340 |  | Cast & Stress Seg-060 & Seg-074 | 20d | 2024-11-03 | 2024-11-22 | A2330 | 0d | BOQ Cost [80 Rupee]; Gantry for Box Girder [160 h]; Tower Crane [80 h]; Stressing Vendor [80 h] | 53,875,810 |
| A2350 |  | Cast & Stress Seg-059 & Seg-075 | 20d | 2024-11-23 | 2024-12-12 | A2340 | 0d | BOQ Cost [80 Rupee]; Gantry for Box Girder [160 h]; Tower Crane [80 h]; Stressing Vendor [80 h] | 57,490,571 |
| A2360 |  | Cast & Stress Seg-058 & Seg-076 | 20d | 2024-12-13 | 2025-01-01 | A2350 | 0d | BOQ Cost [80 Rupee]; Gantry for Box Girder [160 h]; Tower Crane [80 h]; Stressing Vendor [80 h] | 58,587,227 |
| A2370 |  | Cast & Stress Seg-057 & Seg-077 | 20d | 2025-01-02 | 2025-01-21 | A2360 | 0d | BOQ Cost [80 Rupee]; Gantry for Box Girder [160 h]; Tower Crane [80 h]; Stressing Vendor [80 h] | 59,760,205 |
| A2380 |  | Cast & Stress Seg-056 & Seg-078 | 20d | 2025-01-22 | 2025-02-10 | A2370 | 0d | BOQ Cost [80 Rupee]; Gantry for Box Girder [160 h]; Tower Crane [80 h]; Stressing Vendor [80 h] | 61,007,825 |
| A2390 |  | Cast & Stress Seg-055 & Seg-079 | 20d | 2025-02-11 | 2025-03-02 | A2380 | 0d | BOQ Cost [80 Rupee]; Gantry for Box Girder [160 h]; Tower Crane [80 h]; Stressing Vendor [80 h] | 36,326,697 |
| A2400 |  | Cast & Stress Seg-054 & Seg-080 | 20d | 2025-03-03 | 2025-03-22 | A2390 | 0d | BOQ Cost [80 Rupee]; Gantry for Box Girder [160 h]; Tower Crane [80 h]; Stressing Vendor [80 h] | 36,637,023 |
| A2410 |  | Cast & Stress Seg-053 & Seg-081 | 20d | 2025-03-23 | 2025-04-14 | A2400 | 0d | BOQ Cost [80 Rupee]; Gantry for Box Girder [160 h]; Tower Crane [80 h]; Stressing Vendor [80 h] | 37,034,069 |
| A2420 |  | Cast & Stress Seg-052 & Seg-082 | 20d | 2025-04-15 | 2025-05-04 | A2410 | 0d | BOQ Cost [80 Rupee]; Gantry for Box Girder [80 h]; Tower Crane [80 h]; Stressing Vendor [80 h] | 37,528,978 |
| A2430 |  | Cast & Stress Seg-051 & Seg-083 | 20d | 2025-05-05 | 2025-05-24 | A2420 | 0d | BOQ Cost [80 Rupee]; Gantry for Box Girder [160 h]; Tower Crane [80 h]; Stressing Vendor [80 h] | 32,296,145 |
| A2440 |  | Cast & Stress Seg-050 & Seg-084 | 20d | 2025-05-25 | 2025-06-16 | A2430 | 0d | BOQ Cost [80 Rupee]; Gantry for Box Girder [160 h]; Tower Crane [80 h]; Stressing Vendor [80 h] | 33,905,022 |
| A2450 |  | Cast & Stress Seg-049 & Seg-085 | 20d | 2025-06-17 | 2025-07-06 | A2440 | 0d | BOQ Cost [80 Rupee]; Gantry for Box Girder [160 h]; Tower Crane [80 h]; Stressing Vendor [80 h] | 33,607,955 |
| A2460 |  | Cast & Stress Seg-048 & Seg-086 | 20d | 2025-07-07 | 2025-07-26 | A2450 | 0d | BOQ Cost [80 Rupee]; Gantry for Box Girder [160 h]; Tower Crane [80 h]; Stressing Vendor [80 h] | 33,383,350 |
| A2470 |  | Cast & Stress Seg-047 & Seg-087 | 20d | 2025-07-27 | 2025-08-15 | A2460 | 0d | BOQ Cost [80 Rupee]; Gantry for Box Girder [160 h]; Tower Crane [80 h]; Stressing Vendor [80 h] | 33,151,206 |
| A2480 |  | Cast & Stress Seg-046 & Seg-088 | 20d | 2025-08-16 | 2025-09-04 | A2470 | 0d | BOQ Cost [80 Rupee]; Gantry for Box Girder [160 h]; Tower Crane [80 h]; Stressing Vendor [80 h] | 26,225,304 |
|  | 14 | **Box Girder Pier-05** |  | 2024-07-01 | 2025-09-04 |  |  |  |  |
| A2490 |  | Erection of Gantries | 25d | 2024-07-01 | 2024-07-25 | A1810 | 0d | BOQ Cost [200 Rupee]; Stressing Vendor [200 h]; Gantry for Box Girder [200 h]; Tower Crane [200 h] |  |
| A2500 |  | Cast & Stress Seg-109 & Seg-113 | 20d | 2024-07-26 | 2024-08-14 | A2490, A2290 SS-15d | 0d | BOQ Cost [160 Rupee]; Gantry for Box Girder [320 h]; Tower Crane [160 h]; Stressing Vendor [160 h] | 26,633,523 |
| A2510 |  | Cast & Stress Seg-108 & Seg-114 | 20d | 2024-08-15 | 2024-09-03 | A2500 | 0d | BOQ Cost [160 Rupee]; Gantry for Box Girder [320 h]; Tower Crane [160 h]; Stressing Vendor [160 h] | 28,498,057 |
| A2520 |  | Cast & Stress Seg-107 & Seg-115 | 20d | 2024-09-04 | 2024-09-23 | A2510 | 0d | BOQ Cost [120 Rupee]; Gantry for Box Girder [240 h]; Tower Crane [120 h]; Stressing Vendor [120 h] | 31,196,420 |
| A2530 |  | Cast & Stress Seg-106 & Seg-116 | 20d | 2024-09-24 | 2024-10-13 | A2520 | 0d | BOQ Cost [120 Rupee]; Gantry for Box Girder [240 h]; Tower Crane [120 h]; Stressing Vendor [120 h] | 31,081,908 |
| A2540 |  | Cast & Stress Seg-105 & Seg-117 | 20d | 2024-10-14 | 2024-11-02 | A2530 | 0d | BOQ Cost [80 Rupee]; Gantry for Box Girder [160 h]; Tower Crane [80 h]; Stressing Vendor [80 h] | 52,933,992 |
| A2550 |  | Cast & Stress Seg-104 & Seg-118 | 20d | 2024-11-03 | 2024-11-22 | A2540 | 0d | BOQ Cost [80 Rupee]; Gantry for Box Girder [160 h]; Tower Crane [80 h]; Stressing Vendor [80 h] | 53,875,810 |
| A2560 |  | Cast & Stress Seg-103 & Seg-119 | 20d | 2024-11-23 | 2024-12-12 | A2550 | 0d | BOQ Cost [80 Rupee]; Gantry for Box Girder [160 h]; Tower Crane [80 h]; Stressing Vendor [80 h] | 57,490,571 |
| A2570 |  | Cast & Stress Seg-102 & Seg-120 | 20d | 2024-12-13 | 2025-01-01 | A2560 | 0d | BOQ Cost [80 Rupee]; Gantry for Box Girder [160 h]; Tower Crane [80 h]; Stressing Vendor [80 h] | 58,587,227 |
| A2580 |  | Cast & Stress Seg-101 & Seg-121 | 20d | 2025-01-02 | 2025-01-21 | A2570 | 0d | BOQ Cost [80 Rupee]; Gantry for Box Girder [160 h]; Tower Crane [80 h]; Stressing Vendor [80 h] | 59,760,205 |
| A2590 |  | Cast & Stress Seg-100 & Seg-122 | 20d | 2025-01-22 | 2025-02-10 | A2580 | 0d | BOQ Cost [80 Rupee]; Gantry for Box Girder [160 h]; Tower Crane [80 h]; Stressing Vendor [80 h] | 61,007,825 |
| A2600 |  | Cast & Stress Seg-99 & Seg-123 | 20d | 2025-02-11 | 2025-03-02 | A2590 | 0d | BOQ Cost [80 Rupee]; Gantry for Box Girder [160 h]; Tower Crane [80 h]; Stressing Vendor [80 h] | 36,326,697 |
| A2610 |  | Cast & Stress Seg-98 & Seg-124 | 20d | 2025-03-03 | 2025-03-22 | A2600 | 0d | BOQ Cost [80 Rupee]; Gantry for Box Girder [160 h]; Tower Crane [80 h]; Stressing Vendor [80 h] | 36,637,023 |
| A2620 |  | Cast & Stress Seg-97 & Seg-125 | 20d | 2025-03-23 | 2025-04-14 | A2610 | 0d | BOQ Cost [80 Rupee]; Gantry for Box Girder [160 h]; Tower Crane [80 h]; Stressing Vendor [80 h] | 37,034,069 |
| A2630 |  | Cast & Stress Seg-96 & Seg-126 | 20d | 2025-04-15 | 2025-05-04 | A2620 | 0d | BOQ Cost [80 Rupee]; Gantry for Box Girder [160 h]; Tower Crane [80 h]; Stressing Vendor [80 h] | 37,528,978 |
| A2640 |  | Cast & Stress Seg-95 & Seg-127 | 20d | 2025-05-05 | 2025-05-24 | A2630 | 0d | BOQ Cost [80 Rupee]; Gantry for Box Girder [160 h]; Tower Crane [80 h]; Stressing Vendor [80 h] | 32,296,145 |
| A2650 |  | Cast & Stress Seg-94 & Seg-128 | 20d | 2025-05-25 | 2025-06-16 | A2640 | 0d | BOQ Cost [80 Rupee]; Gantry for Box Girder [160 h]; Tower Crane [80 h]; Stressing Vendor [80 h] | 33,905,022 |
| A2660 |  | Cast & Stress Seg-93 & Seg-129 | 20d | 2025-06-17 | 2025-07-06 | A2650 | 0d | BOQ Cost [80 Rupee]; Gantry for Box Girder [160 h]; Tower Crane [80 h]; Stressing Vendor [80 h] | 33,607,955 |
| A2670 |  | Cast & Stress Seg-92 & Seg-130 | 20d | 2025-07-07 | 2025-07-26 | A2660 | 0d | BOQ Cost [80 Rupee]; Gantry for Box Girder [160 h]; Tower Crane [80 h]; Stressing Vendor [80 h] | 33,383,350 |
| A2680 |  | Cast & Stress Seg-91 & Seg-131 | 20d | 2025-07-27 | 2025-08-15 | A2670 | 0d | BOQ Cost [80 Rupee]; Gantry for Box Girder [160 h]; Tower Crane [80 h]; Stressing Vendor [80 h] | 33,151,206 |
| A2690 |  | Cast & Stress Seg-90 & Seg-132 | 20d | 2025-08-16 | 2025-09-04 | A2680 | 0d | BOQ Cost [80 Rupee]; Gantry for Box Girder [160 h]; Tower Crane [80 h]; Stressing Vendor [80 h] | 26,225,304 |

| ID | WBS | Activity | Duration | Start | Finish | Predecessors | Total float | Free float | Resources | Cost |
| --- | --- | --- | --- | --- | --- | --- | --- | --- | --- | --- |
|  | 19 | **Segment-133** |  | 2024-08-06 | 2024-10-20 |  |  |  |  |  |
| A2840 |  | Design & Construct Temporary Support | 30d | 2024-08-06 | 2024-09-04 | A3030 | 313d | 0d | BOQ Cost [240 Rupee] | 198,198,000 |
| A2850 |  | Falsework | 15d | 2024-09-05 | 2024-09-19 | A2840 | 313d | 0d | BOQ Cost [120 Rupee] |  |
| A2860 |  | Bottom Slab | 10d | 2024-09-20 | 2024-09-29 | A2850 | 313d | 0d | BOQ Cost [80 Rupee] | 15,222,509 |
| A2870 |  | Webs & Diaphragms | 7d | 2024-09-30 | 2024-10-06 | A2860 | 313d | 0d | BOQ Cost [56 Rupee] | 18,079,209 |
| A2880 |  | Top Slab | 7d | 2024-10-07 | 2024-10-13 | A2870 | 313d | 0d | BOQ Cost [56 Rupee] | 26,067,389 |
| A2890 |  | Stressing & Grouting | 7d | 2024-10-14 | 2024-10-20 | A2880 | 313d |  | BOQ Cost [56 Rupee]; Stressing Vendor [56 h] | 4,336,479 |
|  | 18 | **Segment-01** |  | 2024-02-08 | 2024-04-27 |  |  |  |  |  |
| A2780 |  | Design & Construct Temporary Support | 30d | 2024-02-08 | 2024-03-08 | A1560 | 489d | 0d | BOQ Cost [240 Rupee] | 198,198,000 |
| A2790 |  | Falsework | 15d | 2024-03-09 | 2024-03-23 | A2780 | 489d | 0d | BOQ Cost [120 Rupee] |  |
| A2800 |  | Bottom Slab | 10d | 2024-03-24 | 2024-04-02 | A2790 | 489d | 0d | BOQ Cost [80 Rupee] | 15,222,509 |
| A2810 |  | Webs & Diaphragms | 7d | 2024-04-03 | 2024-04-09 | A2800 | 489d | 0d | BOQ Cost [56 Rupee] | 18,079,209 |
| A2820 |  | Top Slab | 7d | 2024-04-14 | 2024-04-20 | A2810 | 489d | 0d | BOQ Cost [56 Rupee] | 26,067,389 |
| A2830 |  | Stressing & Grouting | 7d | 2024-04-21 | 2024-04-27 | A2820 | 489d |  | BOQ Cost [56 Rupee]; Stressing Vendor [56 h] | 4,336,479 |
|  | 20 | **Closure Segments** |  | 2025-09-05 | 2025-10-31 |  |  |  |  |  |
| A2900 |  | Cast Closure Segments | 10d | 2025-09-05 | 2025-09-14 | A2830, A2890, A2690, A2480, A2270 | 0d |  | BOQ Cost [80 Rupee]; Gantry for Box Girder [480 h] | 7,903,231 |
| A2910 |  | Remove Gantries | 10d | 2025-09-15 | 2025-09-24 | A2900 | 0d |  | BOQ Cost [80 Rupee] |  |
| A2920 |  | Stress Bottom Tendons | 30d | 2025-09-25 | 2025-10-24 | A2910 | 0d |  | BOQ Cost [120 Rupee]; Stressing Vendor [120 h] | 186,343,921 |
| A2940 |  | Remove Temporary Support | 7d | 2025-10-25 | 2025-10-31 | A2920 | 53d |  | BOQ Cost [56 Rupee] | 99,099,000 |
|  | 15 | **Sundries** |  | 2023-01-23 | 2025-12-23 |  |  |  |  |  |
| A2990 |  | Earthwork & Overlays | 60d | 2023-01-23 | 2023-03-23 |  | 1017d |  | BOQ Cost [480 Rupee]; Chain Excavator [720 h]; Dumper [1920 h]; Bulldozer [480 h] | 105,117,310 |
| A3000 |  | Electrification Works | 60d | 2023-01-23 | 2023-03-23 |  | 1017d |  | BOQ Cost [480 Rupee] | 66,425,178 |
| A2700 |  | Walkway & Barrier | 25d | 2025-10-25 | 2025-11-18 | A2920, A1121, A1291 | 0d |  | BOQ Cost [240 Rupee]; Formwork Labor [14400 h]; Concrete Labor [1584 h]; Steel Fixing Labor [4032 h] | 101,104,117 |
| A2720 |  | Latex Modified Wearing Course | 10d | 2025-11-19 | 2025-11-28 | A2700 | 0d |  | BOQ Cost [80 Rupee] | 51,000,000 |
| A2730 |  | Expansion Joints | 20d | 2025-11-29 | 2025-12-18 | A2720 | 0d |  | BOQ Cost [112 Rupee] | 119,242,750 |
| A2740 |  | Road Furniture | 15d | 2025-12-09 | 2025-12-23 | A2730 FF+5d | 0d |  | BOQ Cost [120 Rupee] | 2,164,798 |
